# Planificación temporal

Schedule from MS Project, 2021-05-07 to 2021-07-09, 7.5 hours a day, costs in €, A marks actual dates.

## Calendars

- Estándar: Mon-Fri 09:00-13:00, 15:00-19:00; Sat-Sun off.

## Resources

| Resource | Rate |
| --- | --- |
| Jefe de proyecto | 65 |
| Analistas | 25 |
| Programadores | 15 |
| Diseñador | 15 |
| Servidores | 2000 |
| Licencia | 500 |
| Programadores_MJ | 20 |
| Subdirector | 40 |
| Equipos de trabajo | 2500 |
| Viajes | 1500 |

## Schedule

| ID | WBS | Task | Type | Duration | Start | Finish | Predecessors | Complete | Remaining | Baseline start | Baseline finish | Baseline duration | Total slack | Constraint | Resources | Work | Actual work | Cost | Baseline cost | Actual cost |
| --- | --- | --- | --- | --- | --- | --- | --- | --- | --- | --- | --- | --- | --- | --- | --- | --- | --- | --- | --- | --- |
| 1 | 1 | **Game Discovery** |  | 48.67d | 2021-05-07 A | 2021-07-09 |  | 33% | 32.61d | 2021-05-07 | 2021-07-05 | 44.4d | 0d |  | Licencia | 1012h | 346.8h | 26,780 | 26,780 | 9,401.95 |
| 2 | 1.1 | **Reunion** |  | 42.8d | 2021-05-10 | 2021-07-05 |  |  |  | 2021-05-10 | 2021-07-05 | 42.8d | 4.8d |  |  |  |  |  |  |  |
| 3 | 1.1.1 | Reunion 1 |  | 1h | 2021-05-10 | 2021-05-10 |  |  |  | 2021-05-10 | 2021-05-10 | 1h | 43.2d | start no earlier than 2021-05-10 |  |  |  |  |  |  |
| 4 | 1.1.2 | Reunion 2 |  | 1h | 2021-05-17 | 2021-05-17 |  |  |  | 2021-05-17 | 2021-05-17 | 1h | 37.87d | start no earlier than 2021-05-17 |  |  |  |  |  |  |
| 5 | 1.1.3 | Reunion 3 |  | 1h | 2021-05-24 | 2021-05-24 |  |  |  | 2021-05-24 | 2021-05-24 | 1h | 32.53d | start no earlier than 2021-05-24 |  |  |  |  |  |  |
| 6 | 1.1.4 | Reunion 4 |  | 1h | 2021-05-31 | 2021-05-31 |  |  |  | 2021-05-31 | 2021-05-31 | 1h | 27.2d | start no earlier than 2021-05-31 |  |  |  |  |  |  |
| 7 | 1.1.5 | Reunion 5 |  | 1h | 2021-06-07 | 2021-06-07 |  |  |  | 2021-06-07 | 2021-06-07 | 1h | 21.87d | start no earlier than 2021-06-07 |  |  |  |  |  |  |
| 8 | 1.1.6 | Reunion 6 |  | 1h | 2021-06-14 | 2021-06-14 |  |  |  | 2021-06-14 | 2021-06-14 | 1h | 16.53d | start no earlier than 2021-06-14 |  |  |  |  |  |  |
| 9 | 1.1.7 | Reunion 7 |  | 1h | 2021-06-21 | 2021-06-21 |  |  |  | 2021-06-21 | 2021-06-21 | 1h | 11.2d | start no earlier than 2021-06-21 |  |  |  |  |  |  |
| 10 | 1.1.8 | Reunion 8 |  | 1h | 2021-06-28 | 2021-06-28 |  |  |  | 2021-06-28 | 2021-06-28 | 1h | 5.87d | start no earlier than 2021-06-28 |  |  |  |  |  |  |
| 11 | 1.1.9 | Reunion 9 |  | 1h | 2021-07-05 | 2021-07-05 |  |  |  | 2021-07-05 | 2021-07-05 | 1h | 0.53d | start no earlier than 2021-07-05 |  |  |  |  |  |  |
| 12 | 1.1 | **Fase de análisis** |  | 14.93d | 2021-05-07 A | 2021-05-26 |  | 96% | 0.67d | 2021-05-07 | 2021-05-26 | 14.93d | 33.73d |  |  | 176h | 168.8h | 6,140 | 6,140 | 5,933 |
| 13 | 1.1.1 | **Declaración de alcance** |  | 4d | 2021-05-07 A | 2021-05-12 |  | 94% | 0.24d | 2021-05-07 | 2021-05-12 | 4d | 44.67d |  |  | 50h | 46.4h | 1,550 | 1,550 | 1,433 |
| 14 | 1.1.1.1 | DAFO |  | 10h | 2021-05-07 A | 2021-05-10 A |  | 100% |  | 2021-05-07 | 2021-05-10 | 10h |  |  | Analistas | 10h | 10h | 250 | 250 | 250 |
| 15 | 1.1.1.2 | Planificación económica |  | 8h | 2021-05-10 A | 2021-05-11 A | 14FS-1h | 100% |  | 2021-05-10 | 2021-05-11 | 8h |  |  | Analistas; Subdirector | 16h | 16h | 520 | 520 | 520 |
| 16 | 1.1.1.3 | Priorización de objetivos |  | 6h | 2021-05-11 A | 2021-05-11 | 15 | 70% | 1.8h | 2021-05-11 | 2021-05-11 | 6h | 45.6d |  | Analistas; Subdirector | 12h | 8.4h | 390 | 390 | 273 |
| 17 | 1.1.1.4 | Planificación de tiempos |  | 6h | 2021-05-12 A | 2021-05-12 A | 16FS+1h | 100% |  | 2021-05-12 | 2021-05-12 | 6h |  |  | Analistas; Subdirector | 12h | 12h | 390 | 390 | 390 |
| 18 | 1.2.1.5 | Alcance logrado | milestone | 0h | 2021-05-12 A | 2021-05-12 A | 17 | 100% |  | 2021-05-12 | 2021-05-12 | 0h |  |  |  |  |  |  |  |  |
| 19 | 1.1.2 | **Análisis de requisitos** |  | 5.87d | 2021-05-12 A | 2021-05-20 |  | 92% | 0.46d | 2021-05-12 | 2021-05-20 | 5.87d | 38.8d |  |  | 58h | 54.4h | 1,930 | 1,930 | 1,840 |
| 20 | 1.1.2.1 | Identificación de RF y RNF |  | 12h | 2021-05-12 A | 2021-05-14 A | 14, 18 | 100% |  | 2021-05-12 | 2021-05-14 | 12h |  |  | Analistas; Jefe de proyecto | 24h | 24h | 1,080 | 1,080 | 1,080 |
| 21 | 1.1.2.2 | Priorización de RF |  | 12h | 2021-05-14 A | 2021-05-17 | 20FS-2h | 70% | 3.6h | 2021-05-14 | 2021-05-17 | 12h | 41.73d |  | Analistas | 12h | 8.4h | 300 | 300 | 210 |
| 22 | 1.1.2.3 | Análisis de arquitectura |  | 10h | 2021-05-17 A | 2021-05-18 A | 21 | 100% |  | 2021-05-17 | 2021-05-18 | 10h |  |  | Analistas | 10h | 10h | 250 | 250 | 250 |
| 23 | 1.1.2.4 | Realización de diagramas de casos de uso |  | 12h | 2021-05-18 A | 2021-05-20 A | 22 | 100% |  | 2021-05-18 | 2021-05-20 | 12h |  |  | Analistas | 12h | 12h | 300 | 300 | 300 |
| 24 | 1.2.2.5 | Requisitos analizados | milestone | 0h | 2021-05-20 A | 2021-05-20 A | 23 | 100% |  | 2021-05-20 | 2021-05-20 | 0h |  |  |  |  |  |  |  |  |

| ID | WBS | Task | Type | Duration | Start | Finish | Predecessors | Complete | Remaining | Baseline start | Baseline finish | Baseline duration | Total slack | Free slack | Resources | Work | Actual work | Cost | Baseline cost | Actual cost |
| --- | --- | --- | --- | --- | --- | --- | --- | --- | --- | --- | --- | --- | --- | --- | --- | --- | --- | --- | --- | --- |
| 25 | 1.1.3 | **Validación** |  | 8d | 2021-05-17 A | 2021-05-26 A |  | 100% |  | 2021-05-17 | 2021-05-26 | 8d |  |  |  | 68h | 68h | 2,660 | 2,660 | 2,660 |
| 26 | 1.1.3.1 | Definición de la validación RF |  | 8h | 2021-05-17 A | 2021-05-18 A | 21 | 100% |  | 2021-05-17 | 2021-05-18 | 8h |  |  | Analistas; Jefe de proyecto | 16h | 16h | 720 | 720 | 720 |
| 27 | 1.1.3.2 | Definición de la integración |  | 8h | 2021-05-20 A | 2021-05-21 A | 26, 24 | 100% |  | 2021-05-20 | 2021-05-21 | 8h |  |  | Analistas; Jefe de proyecto | 16h | 16h | 720 | 720 | 720 |
| 28 | 1.1.3.3 | Definición de medidas de aseguramiento de la calidad |  | 10h | 2021-05-21 A | 2021-05-24 A | 27 | 100% |  | 2021-05-21 | 2021-05-24 | 10h |  |  | Analistas | 10h | 10h | 250 | 250 | 250 |
| 29 | 1.1.3.4 | Definición de la validación de la arquitectura |  | 8h | 2021-05-24 A | 2021-05-25 A | 28 | 100% |  | 2021-05-24 | 2021-05-25 | 8h |  |  | Analistas; Jefe de proyecto | 16h | 16h | 720 | 720 | 720 |
| 30 | 1.1.3.5 | Definición de la migración |  | 10h | 2021-05-25 A | 2021-05-26 A | 29 | 100% |  | 2021-05-25 | 2021-05-26 | 10h |  |  | Analistas | 10h | 10h | 250 | 250 | 250 |
| 31 | 1.2.3.6 | Definición del proyecto terminada | milestone | 0h | 2021-05-26 A | 2021-05-26 A | 30FS+2h | 100% |  | 2021-05-26 | 2021-05-26 | 0h |  |  |  |  |  |  |  |  |
| 32 | 1.2 | **Fase de Diseño** |  | 14.4d | 2021-05-27 A | 2021-06-15 |  | 91% | 1.35d | 2021-05-27 | 2021-06-15 | 14.4d | 19.2d |  |  | 190h | 178h | 3,550 | 3,550 | 3,304 |
| 33 | 1.2.1 | **Diseño de la IU** |  | 4.8d | 2021-05-27 A | 2021-06-02 A |  | 100% |  | 2021-05-27 | 2021-06-02 | 4.8d |  |  |  | 22h | 22h | 330 | 330 | 330 |
| 34 | 1.2.1.1 | Interfaz de la app de técnicos |  | 2h | 2021-05-27 A | 2021-05-27 A | 31 | 100% |  | 2021-05-27 | 2021-05-27 | 2h |  |  | Diseñador | 2h | 2h | 30 | 30 | 30 |
| 35 | 1.2.1.2 | Interfaz de la app de usuarios |  | 10h | 2021-05-27 A | 2021-05-31 A | 31 | 100% |  | 2021-05-27 | 2021-05-31 | 10h |  |  | Diseñador | 10h | 10h | 150 | 150 | 150 |
| 36 | 1.2.1.3 | Interfaz de la página web |  | 10h | 2021-05-31 A | 2021-06-02 A | 34FS+2h, 35 | 100% |  | 2021-05-31 | 2021-06-02 | 10h |  |  | Diseñador | 10h | 10h | 150 | 150 | 150 |
| 37 | 1.3.1.4 | Interfaz terminada | milestone | 0h | 2021-06-02 A | 2021-06-02 A | 36 | 100% |  | 2021-06-02 | 2021-06-02 | 0h |  |  |  |  |  |  |  |  |
| 38 | 1.2.2 | **Diseño de los módulos** |  | 9.07d | 2021-06-03 A | 2021-06-15 |  | 85% | 1.36d | 2021-06-03 | 2021-06-15 | 9.07d | 19.2d |  |  | 36h | 30.6h | 540 | 540 | 459 |
| 39 | 1.2.2.1 | Diseño del módulo de inversores |  | 18h | 2021-06-03 A | 2021-06-09 A | 37 | 100% |  | 2021-06-03 | 2021-06-09 | 18h |  |  | Diseñador | 18h | 18h | 270 | 270 | 270 |
| 40 | 1.2.2.2 | Diseño del módulo de clientes |  | 18h | 2021-06-09 A | 2021-06-15 | 39 | 70% | 5.4h | 2021-06-09 | 2021-06-15 | 18h | 19.2d |  | Diseñador | 18h | 12.6h | 270 | 270 | 189 |
| 41 | 1.3.2.3 | Módulos terminados | milestone | 0h | 2021-06-15 A | 2021-06-15 A | 39FS-3h, 40 | 100% |  | 2021-06-15 | 2021-06-15 | 0h |  |  |  |  |  |  |  |  |
| 42 | 1.2.3 | **Diseño de la arquitectura** |  | 6.4d | 2021-05-27 A | 2021-06-04 |  | 84% | 1.06d | 2021-05-27 | 2021-06-04 | 6.4d | 7.87d |  |  | 72h | 65.4h | 1,480 | 1,480 | 1,315 |
| 43 | 1.2.3.1 | Lógica del módulo de técnicos |  | 4h | 2021-05-27 A | 2021-05-27 A | 34 | 100% |  | 2021-05-27 | 2021-05-27 | 4h |  |  | Programadores; Analistas | 8h | 8h | 160 | 160 | 160 |
| 44 | 1.2.3.2 | Lógica del módulo de usuarios |  | 22h | 2021-05-31 A | 2021-06-02 | 35 | 70% | 6.6h | 2021-05-31 | 2021-06-02 | 22h | 9.2d | 0d | Programadores; Analistas | 36h | 29.4h | 760 | 760 | 595 |
| 45 | 1.2.3.3 | Lógica de la página web |  | 14h | 2021-06-02 A | 2021-06-04 A | 36 | 100% |  | 2021-06-02 | 2021-06-04 | 14h |  |  | Programadores; Analistas | 28h | 28h | 560 | 560 | 560 |
| 46 | 1.3.3.4 | Lógica del programa acabada | milestone | 0h | 2021-06-04 A | 2021-06-04 A | 43FS+2h, 44, 45 | 100% |  | 2021-06-04 | 2021-06-04 | 0h |  |  |  |  |  |  |  |  |
| 47 | 1.2.4 | **Diseño de bases de datos** |  | 4d | 2021-06-04 A | 2021-06-09 A |  | 100% |  | 2021-06-04 | 2021-06-09 | 4d |  |  |  | 60h | 60h | 1,200 | 1,200 | 1,200 |
| 48 | 1.2.4.1 | Seguridad |  | 10h | 2021-06-04 A | 2021-06-07 A | 43, 44, 45 | 100% |  | 2021-06-04 | 2021-06-07 | 10h |  |  | Programadores; Analistas | 20h | 20h | 400 | 400 | 400 |
| 49 | 1.2.4.2 | Diseño de permisos |  | 10h | 2021-06-07 A | 2021-06-08 A | 48 | 100% |  | 2021-06-07 | 2021-06-08 | 10h |  |  | Programadores; Analistas | 20h | 20h | 400 | 400 | 400 |
| 50 | 1.2.4.3 | Diseño de datos |  | 10h | 2021-06-08 A | 2021-06-09 A | 49 | 100% |  | 2021-06-08 | 2021-06-09 | 10h |  |  | Programadores; Analistas | 20h | 20h | 400 | 400 | 400 |
| 51 | 1.3.4.4 | Diseño completado | milestone | 0h | 2021-06-09 A | 2021-06-09 A | 50 | 100% |  | 2021-06-09 | 2021-06-09 | 0h |  |  |  |  |  |  |  |  |

| ID | WBS | Task | Type | Duration | Start | Finish | Predecessors | Baseline start | Baseline finish | Baseline duration | Total slack | Free slack | Resources | Work | Cost | Baseline cost |
| --- | --- | --- | --- | --- | --- | --- | --- | --- | --- | --- | --- | --- | --- | --- | --- | --- |
| 52 | 1.3 | **Fase de implementación** |  | 19.07d | 2021-05-27 | 2021-06-22 |  | 2021-05-27 | 2021-06-16 | 14.8d | 0d |  | Equipos de trabajo | 248h | 6,220 | 6,220 |
| 53 | 1.3.1 | **Módulos** |  | 8.67d | 2021-06-10 | 2021-06-22 |  | 2021-06-10 | 2021-06-16 | 4.4d | 0d |  |  | 64h | 960 | 960 |
| 54 | 1.3.1.1 | Implementación del módulo de inversores |  | 32h | 2021-06-10 | 2021-06-15 | 51 | 2021-06-10 | 2021-06-11 | 16h | 0d |  | Programadores | 32h | 480 | 480 |
| 55 | 1.3.1.2 | Implementación del módulo de gestión |  | 32h | 2021-06-16 | 2021-06-21 | 54 | 2021-06-14 | 2021-06-15 | 16h | 0d |  | Programadores | 32h | 480 | 480 |
| 56 | 1.4.1.3 | Implementación de módulos terminada | milestone | 0h | 2021-06-22 | 2021-06-22 | 54, 55FS+1h | 2021-06-16 | 2021-06-16 | 0h | 0d |  |  |  |  |  |
| 57 | 1.3.2 | **Implementación de base de datos** |  | 3.47d | 2021-06-07 | 2021-06-10 |  | 2021-06-07 | 2021-06-10 | 3.47d | 7.87d |  |  | 32h | 480 | 480 |
| 58 | 1.3.2.1 | Seguridad |  | 16h | 2021-06-07 | 2021-06-09 | 48 | 2021-06-07 | 2021-06-09 | 16h | 9.2d | 1.33d | Programadores | 16h | 240 | 240 |
| 59 | 1.3.2.2 | Implementación de permisos |  | 16h | 2021-06-08 | 2021-06-10 | 49 | 2021-06-08 | 2021-06-10 | 16h | 7.87d | 0d | Programadores | 16h | 240 | 240 |
| 60 | 1.4.2.3 | Base de datos implementada | milestone | 0h | 2021-06-10 | 2021-06-10 | 58, 59 | 2021-06-10 | 2021-06-10 | 0h | 3.6d |  |  |  |  |  |
| 61 | 1.3.3 | **Implementación de la IU** |  | 8d | 2021-05-27 | 2021-06-07 |  | 2021-05-27 | 2021-06-07 | 8d | 11.07d |  |  | 62h | 930 | 930 |
| 62 | 1.3.3.1 | Interfaz de app para técnicos |  | 10h | 2021-05-27 | 2021-05-28 | 34 | 2021-05-27 | 2021-05-28 | 10h | 17.73d | 6.67d | Programadores | 10h | 150 | 150 |
| 63 | 1.3.3.2 | Interfaz de app para clientes |  | 26h | 2021-05-31 | 2021-06-03 | 35 | 2021-05-31 | 2021-06-03 | 26h | 13.47d | 2.4d | Programadores | 26h | 390 | 390 |
| 64 | 1.3.3.3 | Interfaz de página web |  | 26h | 2021-06-02 | 2021-06-07 | 36 | 2021-06-02 | 2021-06-07 | 26h | 11.07d | 0d | Programadores | 26h | 390 | 390 |
| 65 | 1.4.3.4 | Interfaz implementada | milestone | 0h | 2021-06-07 | 2021-06-07 | 62, 63, 64 | 2021-06-07 | 2021-06-07 | 0h | 6.8d |  |  |  |  |  |
| 66 | 1.3.4 | **Implementación de la arquitectura** |  | 18.53d | 2021-05-27 | 2021-06-22 |  | 2021-05-27 | 2021-06-16 | 14.27d | 0d |  |  | 90h | 1,350 | 1,350 |
| 67 | 1.3.4.1 | Lógica de app para técnicos |  | 18h | 2021-05-27 | 2021-05-31 | 43 | 2021-05-27 | 2021-05-31 | 18h | 16.13d |  | Programadores | 18h | 270 | 270 |
| 68 | 1.3.4.2 | Lógica de app para clientes |  | 36h | 2021-06-03 | 2021-06-09 | 44 | 2021-06-03 | 2021-06-09 | 36h | 9.2d |  | Programadores | 36h | 540 | 540 |
| 69 | 1.3.4.3 | Lógica de página web |  | 36h | 2021-06-04 | 2021-06-10 | 45 | 2021-06-04 | 2021-06-10 | 36h | 7.87d |  | Programadores | 36h | 540 | 540 |
| 70 | 1.4.4.4 | Versión preliminar del producto | milestone | 0h | 2021-06-22 | 2021-06-22 | 67, 68, 69, 56, 60, 65 | 2021-06-16 | 2021-06-16 | 0h | 0d |  |  |  |  |  |
| 71 | 1.4 | **Fase de validación y pruebas** |  | 11.47d | 2021-06-22 | 2021-07-06 |  | 2021-06-16 | 2021-06-30 | 11.47d | 0d |  |  | 334h | 6,550 | 6,550 |
| 72 | 1.4.1 | **Casos de prueba** |  | 2.93d | 2021-06-22 | 2021-06-24 |  | 2021-06-16 | 2021-06-18 | 2.93d | 4.27d |  |  | 38h | 730 | 730 |
| 73 | 1.4.1.1 | Diseño de datos de entrada |  | 8h | 2021-06-22 | 2021-06-23 | 70 | 2021-06-16 | 2021-06-17 | 8h | 4.27d | 0d | Analistas; Programadores | 14h | 270 | 270 |
| 74 | 1.4.1.2 | Introducción de datos en la base de datos |  | 6h | 2021-06-23 | 2021-06-23 | 73 | 2021-06-17 | 2021-06-17 | 6h | 11.47d | 0d | Analistas; Programadores | 10h | 190 | 190 |
| 75 | 1.4.1.3 | Validar consistencia de datos |  | 8h | 2021-06-23 | 2021-06-24 | 74, 73 | 2021-06-17 | 2021-06-18 | 8h | 11.47d | 0d | Analistas; Programadores | 14h | 270 | 270 |
| 76 | 1.5.1.4 | Casos de prueba completados | milestone | 0h | 2021-06-24 | 2021-06-24 | 73FS+3h, 74, 75 | 2021-06-18 | 2021-06-18 | 0h | 11.47d |  |  |  |  |  |

| ID | WBS | Task | Type | Duration | Start | Finish | Predecessors | Baseline start | Baseline finish | Baseline duration | Total slack | Free slack | Resources | Work | Cost | Baseline cost |
| --- | --- | --- | --- | --- | --- | --- | --- | --- | --- | --- | --- | --- | --- | --- | --- | --- |
| 77 | 1.4.2 | **Datos de prueba** |  | 2.13d | 2021-06-23 | 2021-06-25 |  | 2021-06-17 | 2021-06-21 | 2.13d | 4.27d |  |  | 16h | 360 | 360 |
| 78 | 1.4.2.1 | Datos de entrada |  | 5h | 2021-06-23 | 2021-06-24 | 73 | 2021-06-17 | 2021-06-18 | 5h | 4.27d | 0d | Analistas; Programadores_MJ | 8h | 180 | 180 |
| 79 | 1.4.2.2 | Datos de salida |  | 5h | 2021-06-24 | 2021-06-25 | 78 | 2021-06-18 | 2021-06-21 | 5h | 4.27d | 0d | Analistas; Programadores_MJ | 8h | 180 | 180 |
| 80 | 1.5.2.3 | Datos verificados | milestone | 0h | 2021-06-25 | 2021-06-25 | 78, 79 | 2021-06-21 | 2021-06-21 | 0h | 11.2d |  |  |  |  |  |
| 81 | 1.4.3 | **Pruebas unitarias** |  | 7.47d | 2021-06-22 | 2021-07-01 |  | 2021-06-16 | 2021-06-25 | 7.47d | 0d |  |  | 220h | 4,260 | 4,260 |
| 82 | 1.4.3.1 | Pruebas de arquitectura |  | 28h | 2021-06-22 | 2021-06-25 | 70 | 2021-06-16 | 2021-06-21 | 28h | 0d |  | Analistas; Programadores [200%] | 84h | 1,540 | 1,540 |
| 83 | 1.4.3.2 | Pruebas de aceptación |  | 20h | 2021-06-23 | 2021-06-25 | 82FF | 2021-06-17 | 2021-06-21 | 20h | 0d |  | Analistas; Programadores | 40h | 800 | 800 |
| 84 | 1.4.3.3 | Pruebas de seguridad |  | 28h | 2021-06-25 | 2021-07-01 | 83 | 2021-06-21 | 2021-06-25 | 28h | 0d |  | Analistas; Programadores | 56h | 1,120 | 1,120 |
| 85 | 1.4.3.4 | Pruebas de integración software |  | 20h | 2021-06-28 | 2021-07-01 | 84FF | 2021-06-22 | 2021-06-25 | 20h | 0d |  | Analistas; Programadores | 40h | 800 | 800 |
| 86 | 1.5.3.5 | Pruebas completadas | milestone | 0h | 2021-07-01 | 2021-07-01 | 82, 83, 84, 85 | 2021-06-25 | 2021-06-25 | 0h | 6.93d |  |  |  |  |  |
| 87 | 1.4.4 | **Tratamiento de errores** |  | 4d | 2021-07-01 | 2021-07-06 |  | 2021-06-25 | 2021-06-30 | 4d | 0d |  |  | 60h | 1,200 | 1,200 |
| 88 | 1.4.4.1 | Corrección de errores |  | 26h | 2021-07-01 | 2021-07-06 | 79, 85 | 2021-06-25 | 2021-06-30 | 26h | 0d |  | Analistas; Programadores [200%] | 52h | 1,040 | 1,040 |
| 89 | 1.4.4.2 | Informe de errores |  | 4h | 2021-07-06 | 2021-07-06 | 88 | 2021-06-30 | 2021-06-30 | 4h | 0d |  | Analistas; Programadores | 8h | 160 | 160 |
| 90 | 1.5.4.3 | Testing acabado | milestone | 0h | 2021-07-06 | 2021-07-06 | 89 | 2021-06-30 | 2021-06-30 | 0h | 0d |  |  |  |  |  |
| 91 | 1.5 | **Fase de despliegue** |  | 2.93d | 2021-07-06 | 2021-07-09 |  | 2021-06-30 | 2021-07-05 | 2.93d | 0d |  | Servidores | 64h | 3,820 | 3,820 |
| 92 | 1.5.1 | **Diseño de descriptores** |  | 1.07d | 2021-07-06 | 2021-07-07 |  | 2021-06-30 | 2021-07-01 | 1.07d | 0d |  |  | 28h | 1,060 | 1,060 |
| 93 | 1.5.1.1 | Descripción de servicio |  | 6h | 2021-07-06 | 2021-07-07 | 90 | 2021-06-30 | 2021-07-01 | 6h | 0d |  | Analistas; Jefe de proyecto | 12h | 540 | 540 |
| 94 | 1.5.1.2 | Analisis de técnicas para el lanzamiento |  | 4h | 2021-07-06 | 2021-07-07 | 90 | 2021-06-30 | 2021-07-01 | 4h | 1.33d | 0d | Analistas; Subdirector | 8h | 260 | 260 |
| 95 | 1.5.1.3 | Descripción de despliege |  | 4h | 2021-07-07 | 2021-07-07 | 94 | 2021-07-01 | 2021-07-01 | 4h | 1.33d | 0d | Analistas; Subdirector | 8h | 260 | 260 |
| 96 | 1.6.1.4 | Descriptores tratados | milestone | 0h | 2021-07-07 | 2021-07-07 | 93, 94, 95 | 2021-07-01 | 2021-07-01 | 0h | 1.87d |  |  |  |  |  |
| 97 | 1.5.2 | **Formación** |  | 2.13d | 2021-07-07 | 2021-07-09 |  | 2021-07-01 | 2021-07-05 | 2.13d | 0d |  |  | 36h | 760 | 760 |
| 98 | 1.5.2.1 | Redacción de guía para usuarios |  | 6h | 2021-07-07 | 2021-07-08 | 93 | 2021-07-01 | 2021-07-02 | 6h | 0.27d |  | Analistas; Programadores | 12h | 240 | 240 |
| 99 | 1.5.2.2 | Redacción de guía para técnicos |  | 8h | 2021-07-07 | 2021-07-08 | 93 | 2021-07-01 | 2021-07-02 | 8h | 0d |  | Analistas; Programadores | 16h | 320 | 320 |
| 100 | 1.5.2.3 | Impartir cursos para usuarios y técnicos |  | 4h | 2021-07-08 | 2021-07-09 | 98, 99 | 2021-07-02 | 2021-07-05 | 4h | 0d |  | Analistas | 4h | 100 | 100 |
| 101 | 1.5.2.4 | Evaluación del grado de aceptacion del producto |  | 4h | 2021-07-09 | 2021-07-09 | 95, 100 | 2021-07-05 | 2021-07-05 | 4h | 0d |  | Analistas | 4h | 100 | 100 |
| 102 | 1.6.2.5 | Finalización de proyecto | milestone | 0h | 2021-07-09 | 2021-07-09 | 101 | 2021-07-05 | 2021-07-05 | 0h | 0d |  |  |  |  |  |
