# Planificación temporal

Schedule from MS Project, 2021-05-07 to 2021-07-08, 7.5 hours a day, costs in €, A marks actual dates.

## Calendars

- Estándar: Mon-Fri 09:00-13:00, 15:00-19:00; Sat-Sun off.

## Resources

| Resource | Rate |
| --- | --- |
| Jefe de proyecto | 65 |
| Analistas | 25 |
| Programadores | 15 |
| Diseñador | 15 |
| Servidores | 2000 |
| Licencia | 500 |
| Programadores_MJ | 20 |
| Subdirector | 40 |
| Equipos de trabajo | 2500 |
| Viajes | 1500 |

## Schedule

| ID | WBS | Task | Type | Duration | Start | Finish | Predecessors | Complete | Remaining | Baseline start | Baseline finish | Baseline duration | Total slack | Resources | Work | Actual work | Cost | Baseline cost | Actual cost |
| --- | --- | --- | --- | --- | --- | --- | --- | --- | --- | --- | --- | --- | --- | --- | --- | --- | --- | --- | --- |
| 1 | 1 | **Game Discovery** |  | 47.47d | 2021-05-07 A | 2021-07-08 |  | 32% | 32.2d | 2021-05-07 | 2021-07-02 | 43.2d | 0d | Licencia | 996h | 331.4h | 23,640 | 23,640 | 8,639 |
| 2 | 1.1 | **Fase de Análisis** |  | 13.6d | 2021-05-07 A | 2021-05-25 |  | 94% | 0.82d | 2021-05-07 | 2021-05-25 | 13.6d | 33.87d |  | 160h | 153.4h | 5,500 | 5,500 | 5,335 |
| 3 | 1.1.1 | **Declaración de alcance** |  | 4d | 2021-05-07 A | 2021-05-12 A |  | 100% |  | 2021-05-07 | 2021-05-12 | 4d |  |  | 50h | 50h | 1,550 | 1,550 | 1,550 |
| 4 | 1.1.1.1 | DAFO |  | 10h | 2021-05-07 A | 2021-05-10 A |  | 100% |  | 2021-05-07 | 2021-05-10 | 10h |  | Analistas | 10h | 10h | 250 | 250 | 250 |
| 5 | 1.1.1.2 | Planificación económica |  | 8h | 2021-05-10 A | 2021-05-11 A | 4 | 100% |  | 2021-05-10 | 2021-05-11 | 8h |  | Analistas; Subdirector | 16h | 16h | 520 | 520 | 520 |
| 6 | 1.1.1.3 | Priorización de objetivos |  | 6h | 2021-05-11 A | 2021-05-11 A | 5 | 100% |  | 2021-05-11 | 2021-05-11 | 6h |  | Analistas; Subdirector | 12h | 12h | 390 | 390 | 390 |
| 7 | 1.1.1.4 | Planificación de tiempos |  | 6h | 2021-05-12 A | 2021-05-12 A | 6 | 100% |  | 2021-05-12 | 2021-05-12 | 6h |  | Analistas; Subdirector | 12h | 12h | 390 | 390 | 390 |
| 8 | 1.1.1.5 | Alcance logrado | milestone | 0h | 2021-05-12 A | 2021-05-12 A | 7 | 100% |  | 2021-05-12 | 2021-05-12 | 0h |  |  |  |  |  |  |  |
| 9 | 1.1.2 | **Análisis de requisitos** |  | 4.8d | 2021-05-12 A | 2021-05-19 |  | 90% | 0.48d | 2021-05-12 | 2021-05-19 | 4.8d | 38.67d |  | 42h | 38.4h | 1,290 | 1,290 | 1,200 |
| 10 | 1.1.2.1 | Identificación de RF y RNF |  | 8h | 2021-05-12 A | 2021-05-13 A | 4, 8 | 100% |  | 2021-05-12 | 2021-05-13 | 8h |  | Analistas | 8h | 8h | 200 | 200 | 200 |
| 11 | 1.1.2.2 | Priorización de RF |  | 6h | 2021-05-13 A | 2021-05-14 A | 10 | 100% |  | 2021-05-13 | 2021-05-14 | 6h |  | Analistas; Jefe de proyecto | 12h | 12h | 540 | 540 | 540 |
| 12 | 1.1.2.3 | Análisis de arquitectura |  | 10h | 2021-05-14 A | 2021-05-17 A | 11 | 100% |  | 2021-05-14 | 2021-05-17 | 10h |  | Analistas | 10h | 10h | 250 | 250 | 250 |
| 13 | 1.1.2.4 | Realización de diagramas de casos de uso |  | 12h | 2021-05-17 A | 2021-05-19 | 12 | 70% | 3.6h | 2021-05-17 | 2021-05-19 | 12h | 38.67d | Analistas | 12h | 8.4h | 300 | 300 | 210 |
| 14 | 1.1.2.5 | Requisitos analizados | milestone | 0h | 2021-05-19 A | 2021-05-19 A | 13 | 100% |  | 2021-05-19 | 2021-05-19 | 0h |  |  |  |  |  |  |  |
| 15 | 1.1.3 | **Validación** |  | 7.73d | 2021-05-14 A | 2021-05-25 |  | 93% | 0.53d | 2021-05-14 | 2021-05-25 | 7.73d | 33.87d |  | 68h | 65h | 2,660 | 2,660 | 2,585 |
| 16 | 1.1.3.1 | Definición de la validación RF |  | 8h | 2021-05-14 A | 2021-05-17 A | 11 | 100% |  | 2021-05-14 | 2021-05-17 | 8h |  | Analistas; Jefe de proyecto | 16h | 16h | 720 | 720 | 720 |
| 17 | 1.1.3.2 | Definición de la integración |  | 8h | 2021-05-19 A | 2021-05-20 A | 13, 16 | 100% |  | 2021-05-19 | 2021-05-20 | 8h |  | Analistas; Jefe de proyecto | 16h | 16h | 720 | 720 | 720 |
| 18 | 1.1.3.3 | Definición de medidas de aseguramiento de la calidad |  | 10h | 2021-05-20 A | 2021-05-21 | 17 | 70% | 3h | 2021-05-20 | 2021-05-21 | 10h | 36.27d | Analistas | 10h | 7h | 250 | 250 | 175 |
| 19 | 1.1.3.4 | Definición de la validación de la arquitectura |  | 8h | 2021-05-21 A | 2021-05-24 A | 18 | 100% |  | 2021-05-21 | 2021-05-24 | 8h |  | Analistas; Jefe de proyecto | 16h | 16h | 720 | 720 | 720 |
| 20 | 1.1.3.5 | Definición de la migración |  | 10h | 2021-05-24 A | 2021-05-25 A | 19 | 100% |  | 2021-05-24 | 2021-05-25 | 10h |  | Analistas | 10h | 10h | 250 | 250 | 250 |
| 21 | 1.1.3.6 | Definición del proyecto terminada | milestone | 0h | 2021-05-25 A | 2021-05-25 A | 20 | 100% |  | 2021-05-25 | 2021-05-25 | 0h |  |  |  |  |  |  |  |
| 22 | 1.2 | **Fase de Diseño** |  | 14.4d | 2021-05-26 A | 2021-06-14 |  | 91% | 1.35d | 2021-05-26 | 2021-06-14 | 14.4d | 19.2d |  | 190h | 178h | 3,550 | 3,550 | 3,304 |
| 23 | 1.2.1 | **Diseño de la IU** |  | 4.8d | 2021-05-26 A | 2021-06-01 A |  | 100% |  | 2021-05-26 | 2021-06-01 | 4.8d |  |  | 22h | 22h | 330 | 330 | 330 |
| 24 | 1.2.1.1 | Interfaz de la app de técnicos |  | 2h | 2021-05-26 A | 2021-05-26 A | 21 | 100% |  | 2021-05-26 | 2021-05-26 | 2h |  | Diseñador | 2h | 2h | 30 | 30 | 30 |
| 25 | 1.2.1.2 | Interfaz de la app de usuarios |  | 10h | 2021-05-26 A | 2021-05-28 A | 21 | 100% |  | 2021-05-26 | 2021-05-28 | 10h |  | Diseñador | 10h | 10h | 150 | 150 | 150 |
| 26 | 1.2.1.3 | Interfaz de la página web |  | 10h | 2021-05-28 A | 2021-06-01 A | 24, 25 | 100% |  | 2021-05-28 | 2021-06-01 | 10h |  | Diseñador | 10h | 10h | 150 | 150 | 150 |

| ID | WBS | Task | Type | Duration | Start | Finish | Predecessors | Complete | Remaining | Baseline start | Baseline finish | Baseline duration | Total slack | Free slack | Resources | Work | Actual work | Cost | Baseline cost | Actual cost |
| --- | --- | --- | --- | --- | --- | --- | --- | --- | --- | --- | --- | --- | --- | --- | --- | --- | --- | --- | --- | --- |
| 27 | 1.2.2 | **Diseño de los módulos** |  | 9.07d | 2021-06-02 A | 2021-06-14 |  | 85% | 1.36d | 2021-06-02 | 2021-06-14 | 9.07d | 19.2d |  |  | 36h | 30.6h | 540 | 540 | 459 |
| 28 | 1.2.2.1 | Diseño del módulo de inversores |  | 18h | 2021-06-02 A | 2021-06-08 | 24, 26 | 70% | 5.4h | 2021-06-02 | 2021-06-08 | 18h | 23.73d |  | Diseñador | 18h | 12.6h | 270 | 270 | 189 |
| 29 | 1.2.2.2 | Diseño del módulo de clientes |  | 18h | 2021-06-08 A | 2021-06-14 A | 28 | 100% |  | 2021-06-08 | 2021-06-14 | 18h |  |  | Diseñador | 18h | 18h | 270 | 270 | 270 |
| 30 | 1.2.3 | **Diseño de la arquitectura** |  | 6.4d | 2021-05-26 A | 2021-06-03 |  | 84% | 1.06d | 2021-05-26 | 2021-06-03 | 6.4d | 7.73d |  |  | 72h | 65.4h | 1,480 | 1,480 | 1,315 |
| 31 | 1.2.3.1 | Lógica del módulo de técnicos |  | 4h | 2021-05-26 A | 2021-05-26 A | 24 | 100% |  | 2021-05-26 | 2021-05-26 | 4h |  |  | Programadores; Analistas | 8h | 8h | 160 | 160 | 160 |
| 32 | 1.2.3.2 | Lógica del módulo de usuarios |  | 22h | 2021-05-28 A | 2021-06-01 | 25 | 70% | 6.6h | 2021-05-28 | 2021-06-01 | 22h | 9.07d | 0d | Programadores; Analistas | 36h | 29.4h | 760 | 760 | 595 |
| 33 | 1.2.3.3 | Lógica de la página web |  | 14h | 2021-06-01 A | 2021-06-03 A | 26 | 100% |  | 2021-06-01 | 2021-06-03 | 14h |  |  | Programadores; Analistas | 28h | 28h | 560 | 560 | 560 |
| 34 | 1.2.4 | **Diseño de bases de datos** |  | 4d | 2021-06-03 A | 2021-06-08 A |  | 100% |  | 2021-06-03 | 2021-06-08 | 4d |  |  |  | 60h | 60h | 1,200 | 1,200 | 1,200 |
| 35 | 1.2.4.1 | Seguridad |  | 10h | 2021-06-03 A | 2021-06-04 A | 31, 32, 33 | 100% |  | 2021-06-03 | 2021-06-04 | 10h |  |  | Programadores; Analistas | 20h | 20h | 400 | 400 | 400 |
| 36 | 1.2.4.2 | Diseño de permisos |  | 10h | 2021-06-04 A | 2021-06-07 A | 35 | 100% |  | 2021-06-04 | 2021-06-07 | 10h |  |  | Programadores; Analistas | 20h | 20h | 400 | 400 | 400 |
| 37 | 1.2.4.3 | Diseño de datos |  | 10h | 2021-06-07 A | 2021-06-08 A | 36 | 100% |  | 2021-06-07 | 2021-06-08 | 10h |  |  | Programadores; Analistas | 20h | 20h | 400 | 400 | 400 |
| 38 | 1.2.4.4 | Diseño completado | milestone | 0h | 2021-06-08 A | 2021-06-08 A | 37 | 100% |  | 2021-06-08 | 2021-06-08 | 0h |  |  |  |  |  |  |  |  |
| 39 | 1.3 | **Fase de Implementación** |  | 18.93d | 2021-05-26 | 2021-06-18 |  |  |  | 2021-05-26 | 2021-06-14 | 14.67d | 0d |  |  | 248h |  | 3,720 | 3,720 |  |
| 40 | 1.3.1 | **Módulos** |  | 8.53d | 2021-06-09 | 2021-06-18 |  |  |  | 2021-06-09 | 2021-06-14 | 4.27d | 0d |  |  | 64h |  | 960 | 960 |  |
| 41 | 1.3.1.1 | Implementación del módulo de inversores |  | 32h | 2021-06-09 | 2021-06-14 | 38 |  |  | 2021-06-09 | 2021-06-10 | 16h | 0d |  | Programadores | 32h |  | 480 | 480 |  |
| 42 | 1.3.1.2 | Implementación del módulo de gestión |  | 32h | 2021-06-15 | 2021-06-18 | 41 |  |  | 2021-06-11 | 2021-06-14 | 16h | 0d |  | Programadores | 32h |  | 480 | 480 |  |
| 43 | 1.3.2 | **Implementación de base de datos** |  | 3.47d | 2021-06-04 | 2021-06-09 |  |  |  | 2021-06-04 | 2021-06-09 | 3.47d | 7.73d |  |  | 32h |  | 480 | 480 |  |
| 44 | 1.3.2.1 | Seguridad |  | 16h | 2021-06-04 | 2021-06-08 | 35 |  |  | 2021-06-04 | 2021-06-08 | 16h | 9.07d |  | Programadores | 16h |  | 240 | 240 |  |
| 45 | 1.3.2.2 | Implementación de permisos |  | 16h | 2021-06-07 | 2021-06-09 | 36 |  |  | 2021-06-07 | 2021-06-09 | 16h | 3.47d |  | Programadores | 16h |  | 240 | 240 |  |
| 46 | 1.3.3 | **Implementación de la IU** |  | 8d | 2021-05-26 | 2021-06-04 |  |  |  | 2021-05-26 | 2021-06-04 | 8d | 10.93d |  |  | 62h |  | 930 | 930 |  |
| 47 | 1.3.3.1 | Interfaz de app para técnicos |  | 10h | 2021-05-26 | 2021-05-27 | 24 |  |  | 2021-05-26 | 2021-05-27 | 10h | 13.33d |  | Programadores | 10h |  | 150 | 150 |  |
| 48 | 1.3.3.2 | Interfaz de app para clientes |  | 26h | 2021-05-28 | 2021-06-02 | 25 |  |  | 2021-05-28 | 2021-06-02 | 26h | 9.07d |  | Programadores | 26h |  | 390 | 390 |  |
| 49 | 1.3.3.3 | Interfaz de página web |  | 26h | 2021-06-01 | 2021-06-04 | 26 |  |  | 2021-06-01 | 2021-06-04 | 26h | 10.93d |  | Programadores | 26h |  | 390 | 390 |  |
| 50 | 1.3.4 | **Implementación de la arquitectura** |  | 18.4d | 2021-05-26 | 2021-06-18 |  |  |  | 2021-05-26 | 2021-06-14 | 14.13d | 0d |  |  | 90h |  | 1,350 | 1,350 |  |
| 51 | 1.3.4.1 | Lógica de app para técnicos |  | 18h | 2021-05-26 | 2021-05-28 | 31 |  |  | 2021-05-26 | 2021-05-28 | 18h | 11.73d |  | Programadores | 18h |  | 270 | 270 |  |
| 52 | 1.3.4.2 | Lógica de app para clientes |  | 36h | 2021-06-02 | 2021-06-08 | 32 |  |  | 2021-06-02 | 2021-06-08 | 36h | 9.07d |  | Programadores | 36h |  | 540 | 540 |  |
| 53 | 1.3.4.3 | Lógica de página web |  | 36h | 2021-06-03 | 2021-06-09 | 33 |  |  | 2021-06-03 | 2021-06-09 | 36h | 3.47d |  | Programadores | 36h |  | 540 | 540 |  |
| 54 | 1.3.4.4 | Versión preliminar del producto | milestone | 0h | 2021-06-18 | 2021-06-18 | 51, 52, 53, 41, 42, 44, 45, 47, 48, 49 |  |  | 2021-06-14 | 2021-06-14 | 0h | 0d |  |  |  |  |  |  |  |

| ID | WBS | Task | Type | Duration | Start | Finish | Predecessors | Baseline start | Baseline finish | Baseline duration | Total slack | Free slack | Resources | Work | Cost | Baseline cost |
| --- | --- | --- | --- | --- | --- | --- | --- | --- | --- | --- | --- | --- | --- | --- | --- | --- |
| 55 | 1.4 | **Fase de validación y pruebas** |  | 11.47d | 2021-06-21 | 2021-07-05 |  | 2021-06-15 | 2021-06-29 | 11.47d | 0d |  |  | 334h | 6,550 | 6,550 |
| 56 | 1.4.1 | **Casos de prueba** |  | 2.93d | 2021-06-21 | 2021-06-23 |  | 2021-06-15 | 2021-06-17 | 2.93d | 4.27d |  |  | 38h | 730 | 730 |
| 57 | 1.4.1.1 | Diseño de datos de entrada |  | 8h | 2021-06-21 | 2021-06-21 | 54 | 2021-06-15 | 2021-06-15 | 8h | 4.27d | 0d | Analistas; Programadores | 14h | 270 | 270 |
| 58 | 1.4.1.2 | Introducción de datos en la base de datos |  | 6h | 2021-06-22 | 2021-06-22 | 57 | 2021-06-16 | 2021-06-16 | 6h | 11.47d | 0d | Analistas; Programadores | 10h | 190 | 190 |
| 59 | 1.4.1.3 | Validar consistencia de datos |  | 8h | 2021-06-22 | 2021-06-23 | 58, 57 | 2021-06-16 | 2021-06-17 | 8h | 11.47d |  | Analistas; Programadores | 14h | 270 | 270 |
| 60 | 1.4.2 | **Datos de prueba** |  | 1.6d | 2021-06-22 | 2021-06-23 |  | 2021-06-16 | 2021-06-17 | 1.6d | 4.27d |  |  | 16h | 360 | 360 |
| 61 | 1.4.2.1 | Datos de entrada |  | 4h | 2021-06-22 | 2021-06-22 | 57 | 2021-06-16 | 2021-06-16 | 4h | 4.27d | 0d | Analistas; Programadores_MJ | 8h | 180 | 180 |
| 62 | 1.4.2.2 | Datos de salida |  | 8h | 2021-06-22 | 2021-06-23 | 61 | 2021-06-16 | 2021-06-17 | 8h | 4.8d |  | Analistas; Programadores_MJ | 8h | 180 | 180 |
| 63 | 1.4.3 | **Pruebas unitarias** |  | 7.47d | 2021-06-21 | 2021-06-29 |  | 2021-06-15 | 2021-06-23 | 7.47d | 0d |  |  | 220h | 4,260 | 4,260 |
| 64 | 1.4.3.1 | Pruebas de arquitectura |  | 28h | 2021-06-21 | 2021-06-24 | 54 | 2021-06-15 | 2021-06-18 | 28h | 0d |  | Analistas; Programadores [200%] | 84h | 1,540 | 1,540 |
| 65 | 1.4.3.2 | Pruebas de aceptación |  | 20h | 2021-06-22 | 2021-06-24 | 64FF | 2021-06-16 | 2021-06-18 | 20h | 0d |  | Analistas; Programadores | 40h | 800 | 800 |
| 66 | 1.4.3.3 | Pruebas de seguridad |  | 28h | 2021-06-24 | 2021-06-29 | 65 | 2021-06-18 | 2021-06-23 | 28h | 0d |  | Analistas; Programadores | 56h | 1,120 | 1,120 |
| 67 | 1.4.3.4 | Pruebas de integración software |  | 20h | 2021-06-25 | 2021-06-29 | 66FF | 2021-06-21 | 2021-06-23 | 20h | 0d |  | Analistas; Programadores | 40h | 800 | 800 |
| 68 | 1.4.4 | **Tratamiento de errores** |  | 4d | 2021-06-30 | 2021-07-05 |  | 2021-06-24 | 2021-06-29 | 4d | 0d |  |  | 60h | 1,200 | 1,200 |
| 69 | 1.4.4.1 | Corrección de errores |  | 26h | 2021-06-30 | 2021-07-05 | 62, 67 | 2021-06-24 | 2021-06-29 | 26h | 0d |  | Analistas; Programadores [200%] | 52h | 1,040 | 1,040 |
| 70 | 1.4.4.2 | Informe de errores |  | 4h | 2021-07-05 | 2021-07-05 | 69 | 2021-06-29 | 2021-06-29 | 4h | 0d |  | Analistas; Programadores | 8h | 160 | 160 |
| 71 | 1.4.4.3 | Testing acabado | milestone | 0h | 2021-07-05 | 2021-07-05 | 70 | 2021-06-29 | 2021-06-29 | 0h | 0d |  |  |  |  |  |
| 72 | 1.5 | **Fase de Despliegue** |  | 2.93d | 2021-07-05 | 2021-07-08 |  | 2021-06-29 | 2021-07-02 | 2.93d | 0d |  | Servidores | 64h | 3,820 | 3,820 |
| 73 | 1.5.1 | **Diseño de Descriptores** |  | 1.07d | 2021-07-05 | 2021-07-06 |  | 2021-06-29 | 2021-06-30 | 1.07d | 0d |  |  | 28h | 1,060 | 1,060 |
| 74 | 1.5.1.1 | Descripción de servicio |  | 6h | 2021-07-05 | 2021-07-06 | 71 | 2021-06-29 | 2021-06-30 | 6h | 0d |  | Analistas; Jefe de proyecto | 12h | 540 | 540 |
| 75 | 1.5.1.2 | Analisis de técnicas para el lanzamiento |  | 4h | 2021-07-05 | 2021-07-06 | 71 | 2021-06-29 | 2021-06-30 | 4h | 1.33d | 0d | Analistas; Subdirector | 8h | 260 | 260 |
| 76 | 1.5.1.3 | Descripción de despliege |  | 4h | 2021-07-06 | 2021-07-06 | 75 | 2021-06-30 | 2021-06-30 | 4h | 1.33d |  | Analistas; Subdirector | 8h | 260 | 260 |
| 77 | 1.5.2 | **Formación** |  | 2.13d | 2021-07-06 | 2021-07-08 |  | 2021-06-30 | 2021-07-02 | 2.13d | 0d |  |  | 36h | 760 | 760 |
| 78 | 1.5.2.1 | Redacción de guía para usuarios |  | 6h | 2021-07-06 | 2021-07-07 | 74 | 2021-06-30 | 2021-07-01 | 6h | 0.27d |  | Analistas; Programadores | 12h | 240 | 240 |
| 79 | 1.5.2.2 | Redacción de guía para técnicos |  | 8h | 2021-07-06 | 2021-07-07 | 74 | 2021-06-30 | 2021-07-01 | 8h | 0d |  | Analistas; Programadores | 16h | 320 | 320 |
| 80 | 1.5.2.3 | Impartir cursos para usuarios y técnicos |  | 4h | 2021-07-07 | 2021-07-07 | 78, 79 | 2021-07-01 | 2021-07-01 | 4h | 0d |  | Analistas | 4h | 100 | 100 |
| 81 | 1.5.2.4 | Evaluación del grado de aceptacion del producto |  | 4h | 2021-07-08 | 2021-07-08 | 76, 80 | 2021-07-02 | 2021-07-02 | 4h | 0d |  | Analistas | 4h | 100 | 100 |
| 82 | 1.5.2.5 | Finalización de proyecto | milestone | 0h | 2021-07-08 | 2021-07-08 | 81 | 2021-07-02 | 2021-07-02 | 0h | 0d |  |  |  |  |  |
