# Planificación temporal

Schedule from MS Project, 2021-05-07 to 2021-07-05, 7.5 hours a day, costs in €.

## Calendars

- Estándar: Mon-Fri 09:00-13:00, 15:00-19:00; Sat-Sun off.

## Resources

| Resource | Rate |
| --- | --- |
| Jefe de proyecto | 65 |
| Analistas | 25 |
| Programadores | 15 |
| Diseñador | 15 |
| Servidores | 2000 |
| Licencia | 500 |
| Programadores_MJ | 20 |
| Subdirector | 40 |
| Equipos de trabajo | 2500 |
| Viajes | 1500 |

## Schedule

| ID | WBS | Task | Type | Duration | Start | Finish | Predecessors | Baseline start | Baseline finish | Baseline duration | Total slack | Free slack | Resources | Work | Cost | Baseline cost |
| --- | --- | --- | --- | --- | --- | --- | --- | --- | --- | --- | --- | --- | --- | --- | --- | --- |
| 1 | 1 | **Game Discovery** |  | 44.27d | 2021-05-07 | 2021-07-05 |  | 2021-05-07 | 2021-07-05 | 44.27d | 0d |  | Licencia | 1012h | 24,280 | 24,280 |
| 2 | 1.1 | **Fase de análisis** |  | 14.93d | 2021-05-07 | 2021-05-26 |  | 2021-05-07 | 2021-05-26 | 14.93d | 0d |  |  | 176h | 6,140 | 6,140 |
| 3 | 1.1.1 | **Declaración de alcance** |  | 4d | 2021-05-07 | 2021-05-12 |  | 2021-05-07 | 2021-05-12 | 4d | 0d |  |  | 50h | 1,550 | 1,550 |
| 4 | 1.1.1.1 | DAFO |  | 10h | 2021-05-07 | 2021-05-10 |  | 2021-05-07 | 2021-05-10 | 10h | 0d |  | Analistas | 10h | 250 | 250 |
| 5 | 1.1.1.2 | Planificación económica |  | 8h | 2021-05-10 | 2021-05-11 | 4 | 2021-05-10 | 2021-05-11 | 8h | 0d |  | Analistas; Subdirector | 16h | 520 | 520 |
| 6 | 1.1.1.3 | Priorización de objetivos |  | 6h | 2021-05-11 | 2021-05-11 | 5 | 2021-05-11 | 2021-05-11 | 6h | 0d |  | Analistas; Subdirector | 12h | 390 | 390 |
| 7 | 1.1.1.4 | Planificación de tiempos |  | 6h | 2021-05-12 | 2021-05-12 | 6 | 2021-05-12 | 2021-05-12 | 6h | 0d |  | Analistas; Subdirector | 12h | 390 | 390 |
| 8 | 1.1.1.5 | Alcance logrado | milestone | 0h | 2021-05-12 | 2021-05-12 | 7 | 2021-05-12 | 2021-05-12 | 0h | 0d |  |  |  |  |  |
| 9 | 1.1.2 | **Análisis de requisitos** |  | 6.13d | 2021-05-12 | 2021-05-20 |  | 2021-05-12 | 2021-05-20 | 6.13d | 0d |  |  | 58h | 1,930 | 1,930 |
| 10 | 1.1.2.1 | Identificación de RF y RNF |  | 12h | 2021-05-12 | 2021-05-14 | 4, 8 | 2021-05-12 | 2021-05-14 | 12h | 0d |  | Analistas | 12h | 300 | 300 |
| 11 | 1.1.2.2 | Priorización de RF |  | 12h | 2021-05-14 | 2021-05-17 | 10 | 2021-05-14 | 2021-05-17 | 12h | 0d |  | Analistas; Jefe de proyecto | 24h | 1,080 | 1,080 |
| 12 | 1.1.2.3 | Análisis de arquitectura |  | 10h | 2021-05-17 | 2021-05-18 | 11 | 2021-05-17 | 2021-05-18 | 10h | 0d |  | Analistas | 10h | 250 | 250 |
| 13 | 1.1.2.4 | Realización de diagramas de casos de uso |  | 12h | 2021-05-19 | 2021-05-20 | 12 | 2021-05-19 | 2021-05-20 | 12h | 0d |  | Analistas | 12h | 300 | 300 |
| 14 | 1.1.2.5 | Requisitos analizados | milestone | 0h | 2021-05-20 | 2021-05-20 | 13 | 2021-05-20 | 2021-05-20 | 0h | 0d |  |  |  |  |  |
| 15 | 1.1.3 | **Validación** |  | 7.73d | 2021-05-17 | 2021-05-26 |  | 2021-05-17 | 2021-05-26 | 7.73d | 0d |  |  | 68h | 2,660 | 2,660 |
| 16 | 1.1.3.1 | Definición de la validación RF |  | 8h | 2021-05-17 | 2021-05-18 | 11 | 2021-05-17 | 2021-05-18 | 8h | 1.87d |  | Analistas; Jefe de proyecto | 16h | 720 | 720 |
| 17 | 1.1.3.2 | Definición de la integración |  | 8h | 2021-05-20 | 2021-05-21 | 16, 14 | 2021-05-20 | 2021-05-21 | 8h | 0d |  | Analistas; Jefe de proyecto | 16h | 720 | 720 |
| 18 | 1.1.3.3 | Definición de medidas de aseguramiento de la calidad |  | 10h | 2021-05-21 | 2021-05-24 | 17 | 2021-05-21 | 2021-05-24 | 10h | 0d |  | Analistas | 10h | 250 | 250 |
| 19 | 1.1.3.4 | Definición de la validación de la arquitectura |  | 8h | 2021-05-24 | 2021-05-25 | 18 | 2021-05-24 | 2021-05-25 | 8h | 0d |  | Analistas; Jefe de proyecto | 16h | 720 | 720 |
| 20 | 1.1.3.5 | Definición de la migración |  | 10h | 2021-05-25 | 2021-05-26 | 19 | 2021-05-25 | 2021-05-26 | 10h | 0d |  | Analistas | 10h | 250 | 250 |
| 21 | 1.1.3.6 | Definición del proyecto terminada | milestone | 0h | 2021-05-26 | 2021-05-26 | 20 | 2021-05-26 | 2021-05-26 | 0h | 0d |  |  |  |  |  |
| 22 | 1.2 | **Fase de Diseño** |  | 14.4d | 2021-05-27 | 2021-06-15 |  | 2021-05-27 | 2021-06-15 | 14.4d | 0d |  |  | 190h | 3,550 | 3,550 |
| 23 | 1.2.1 | **Diseño de la IU** |  | 4.8d | 2021-05-27 | 2021-06-02 |  | 2021-05-27 | 2021-06-02 | 4.8d | 0d |  |  | 22h | 330 | 330 |
| 24 | 1.2.1.1 | Interfaz de la app de técnicos |  | 2h | 2021-05-27 | 2021-05-27 | 21 | 2021-05-27 | 2021-05-27 | 2h | 2.13d | 0d | Diseñador | 2h | 30 | 30 |
| 25 | 1.2.1.2 | Interfaz de la app de usuarios |  | 10h | 2021-05-27 | 2021-05-31 | 21 | 2021-05-27 | 2021-05-31 | 10h | 0d |  | Diseñador | 10h | 150 | 150 |
| 26 | 1.2.1.3 | Interfaz de la página web |  | 10h | 2021-05-31 | 2021-06-02 | 24, 25 | 2021-05-31 | 2021-06-02 | 10h | 0d |  | Diseñador | 10h | 150 | 150 |
| 27 | 1.2.1.4 | Interfaz terminada | milestone | 0h | 2021-06-02 | 2021-06-02 | 26 |  |  |  | 15.47d | 0.53d |  |  |  |  |

| ID | WBS | Task | Type | Duration | Start | Finish | Predecessors | Baseline start | Baseline finish | Baseline duration | Total slack | Free slack | Resources | Work | Cost | Baseline cost |
| --- | --- | --- | --- | --- | --- | --- | --- | --- | --- | --- | --- | --- | --- | --- | --- | --- |
| 28 | 1.2.2 | **Diseño de los módulos** |  | 9.07d | 2021-06-03 | 2021-06-15 |  | 2021-06-03 | 2021-06-15 | 9.07d | 14.93d |  |  | 36h | 540 | 540 |
| 29 | 1.2.2.1 | Diseño del módulo de inversores |  | 18h | 2021-06-03 | 2021-06-09 | 27 | 2021-06-03 | 2021-06-09 | 18h | 14.93d | 0d | Diseñador | 18h | 270 | 270 |
| 30 | 1.2.2.2 | Diseño del módulo de clientes |  | 18h | 2021-06-09 | 2021-06-15 | 29 | 2021-06-09 | 2021-06-15 | 18h | 14.93d | 0d | Diseñador | 18h | 270 | 270 |
| 31 | 1.2.2.3 | Módulos terminados | milestone | 0h | 2021-06-15 | 2021-06-15 | 29, 30 |  |  |  | 14.93d |  |  |  |  |  |
| 32 | 1.2.3 | **Diseño de la arquitectura** |  | 6.4d | 2021-05-27 | 2021-06-04 |  | 2021-05-27 | 2021-06-04 | 6.4d | 3.47d |  |  | 72h | 1,480 | 1,480 |
| 33 | 1.2.3.1 | Lógica del módulo de técnicos |  | 4h | 2021-05-27 | 2021-05-27 | 24 | 2021-05-27 | 2021-05-27 | 4h | 5.87d | 0d | Programadores; Analistas | 8h | 160 | 160 |
| 34 | 1.2.3.2 | Lógica del módulo de usuarios |  | 22h | 2021-05-31 | 2021-06-02 | 25 | 2021-05-31 | 2021-06-02 | 22h | 1.33d | 0d | Programadores; Analistas | 36h | 760 | 760 |
| 35 | 1.2.3.3 | Lógica de la página web |  | 14h | 2021-06-02 | 2021-06-04 | 26 | 2021-06-02 | 2021-06-04 | 14h | 0d |  | Programadores; Analistas | 28h | 560 | 560 |
| 36 | 1.2.3.4 | Lógica del programa acabada | milestone | 0h | 2021-06-04 | 2021-06-04 | 33, 34, 35 |  |  |  | 22.67d |  |  |  |  |  |
| 37 | 1.2.4 | **Diseño de bases de datos** |  | 4d | 2021-06-04 | 2021-06-09 |  | 2021-06-04 | 2021-06-09 | 4d | 0d |  |  | 60h | 1,200 | 1,200 |
| 38 | 1.2.4.1 | Seguridad |  | 10h | 2021-06-04 | 2021-06-07 | 33, 34, 35 | 2021-06-04 | 2021-06-07 | 10h | 0d |  | Programadores; Analistas | 20h | 400 | 400 |
| 39 | 1.2.4.2 | Diseño de permisos |  | 10h | 2021-06-07 | 2021-06-08 | 38 | 2021-06-07 | 2021-06-08 | 10h | 0d |  | Programadores; Analistas | 20h | 400 | 400 |
| 40 | 1.2.4.3 | Diseño de datos |  | 10h | 2021-06-08 | 2021-06-09 | 39 | 2021-06-08 | 2021-06-09 | 10h | 0d |  | Programadores; Analistas | 20h | 400 | 400 |
| 41 | 1.2.4.4 | Diseño completado | milestone | 0h | 2021-06-09 | 2021-06-09 | 40 | 2021-06-09 | 2021-06-09 | 0h | 0d |  |  |  |  |  |
| 42 | 1.3 | **Fase de implementación** |  | 14.67d | 2021-05-27 | 2021-06-15 |  | 2021-05-27 | 2021-06-15 | 14.67d | 0d |  |  | 248h | 3,720 | 3,720 |
| 43 | 1.3.1 | **Módulos** |  | 4.27d | 2021-06-10 | 2021-06-15 |  | 2021-06-10 | 2021-06-15 | 4.27d | 0d |  |  | 64h | 960 | 960 |
| 44 | 1.3.1.1 | Implementación del módulo de inversores |  | 16h | 2021-06-10 | 2021-06-11 | 41 | 2021-06-10 | 2021-06-11 | 16h | 0d |  | Programadores [200%] | 32h | 480 | 480 |
| 45 | 1.3.1.2 | Implementación del módulo de gestión |  | 16h | 2021-06-14 | 2021-06-15 | 44 | 2021-06-14 | 2021-06-15 | 16h | 0d |  | Programadores [200%] | 32h | 480 | 480 |
| 46 | 1.3.1.3 | Implementación de módulos terminada | milestone | 0h | 2021-06-15 | 2021-06-15 | 44, 45 |  |  |  | 0d |  |  |  |  |  |
| 47 | 1.3.2 | **Implementación de base de datos** |  | 3.47d | 2021-06-07 | 2021-06-10 |  | 2021-06-07 | 2021-06-10 | 3.47d | 3.47d |  |  | 32h | 480 | 480 |
| 48 | 1.3.2.1 | Seguridad |  | 16h | 2021-06-07 | 2021-06-09 | 38 | 2021-06-07 | 2021-06-09 | 16h | 4.8d | 1.33d | Programadores | 16h | 240 | 240 |
| 49 | 1.3.2.2 | Implementación de permisos |  | 16h | 2021-06-08 | 2021-06-10 | 39 | 2021-06-08 | 2021-06-10 | 16h | 3.47d | 0d | Programadores | 16h | 240 | 240 |
| 50 | 1.3.2.3 | Base de datos implementada | milestone | 0h | 2021-06-10 | 2021-06-10 | 48, 49 |  |  |  | 3.47d |  |  |  |  |  |
| 51 | 1.3.3 | **Implementación de la IU** |  | 8d | 2021-05-27 | 2021-06-07 |  | 2021-05-27 | 2021-06-07 | 8d | 6.67d |  |  | 62h | 930 | 930 |
| 52 | 1.3.3.1 | Interfaz de app para técnicos |  | 10h | 2021-05-27 | 2021-05-28 | 24 | 2021-05-27 | 2021-05-28 | 10h | 13.33d | 6.67d | Programadores | 10h | 150 | 150 |
| 53 | 1.3.3.2 | Interfaz de app para clientes |  | 26h | 2021-05-31 | 2021-06-03 | 25 | 2021-05-31 | 2021-06-03 | 26h | 9.07d | 2.4d | Programadores | 26h | 390 | 390 |
| 54 | 1.3.3.3 | Interfaz de página web |  | 26h | 2021-06-02 | 2021-06-07 | 26 | 2021-06-02 | 2021-06-07 | 26h | 6.67d | 0d | Programadores | 26h | 390 | 390 |
| 55 | 1.3.3.4 | Interfaz implementada | milestone | 0h | 2021-06-07 | 2021-06-07 | 52, 53, 54 |  |  |  | 6.67d |  |  |  |  |  |

| ID | WBS | Task | Type | Duration | Start | Finish | Predecessors | Baseline start | Baseline finish | Baseline duration | Total slack | Free slack | Resources | Work | Cost | Baseline cost |
| --- | --- | --- | --- | --- | --- | --- | --- | --- | --- | --- | --- | --- | --- | --- | --- | --- |
| 56 | 1.3.4 | **Implementación de la arquitectura** |  | 14.13d | 2021-05-27 | 2021-06-15 |  | 2021-05-27 | 2021-06-15 | 14.13d | 0d |  |  | 90h | 1,350 | 1,350 |
| 57 | 1.3.4.1 | Lógica de app para técnicos |  | 18h | 2021-05-27 | 2021-05-31 | 33 | 2021-05-27 | 2021-05-31 | 18h | 11.73d |  | Programadores | 18h | 270 | 270 |
| 58 | 1.3.4.2 | Lógica de app para clientes |  | 36h | 2021-06-03 | 2021-06-09 | 34 | 2021-06-03 | 2021-06-09 | 36h | 4.8d |  | Programadores | 36h | 540 | 540 |
| 59 | 1.3.4.3 | Lógica de página web |  | 36h | 2021-06-04 | 2021-06-10 | 35 | 2021-06-04 | 2021-06-10 | 36h | 3.47d |  | Programadores | 36h | 540 | 540 |
| 60 | 1.3.4.4 | Versión preliminar del producto | milestone | 0h | 2021-06-15 | 2021-06-15 | 57, 58, 59, 46, 50, 55 | 2021-06-15 | 2021-06-15 | 0h | 0d |  |  |  |  |  |
| 61 | 1.4 | **Fase de validación y pruebas** |  | 41.33d | 2021-05-07 | 2021-06-30 |  | 2021-06-16 | 2021-06-30 | 11.47d | 2.93d |  |  | 334h | 6,550 | 6,550 |
| 62 | 1.4.1 | **Casos de prueba** |  | 32.8d | 2021-05-07 | 2021-06-18 |  | 2021-06-16 | 2021-06-18 | 2.93d | 11.47d |  |  | 38h | 730 | 730 |
| 63 | 1.4.1.1 | Diseño de datos de entrada |  | 8h | 2021-06-16 | 2021-06-16 | 60 | 2021-06-16 | 2021-06-16 | 8h | 4.27d | 0d | Analistas; Programadores | 14h | 270 | 270 |
| 64 | 1.4.1.2 | Introducción de datos en la base de datos |  | 6h | 2021-06-17 | 2021-06-17 | 63 | 2021-06-17 | 2021-06-17 | 6h | 11.47d | 0d | Analistas; Programadores | 10h | 190 | 190 |
| 65 | 1.4.1.3 | Validar consistencia de datos |  | 8h | 2021-06-17 | 2021-06-18 | 64, 63 | 2021-06-17 | 2021-06-18 | 8h | 11.47d |  | Analistas; Programadores | 14h | 270 | 270 |
| 66 | 1.4.1.4 | Casos de prueba completados | milestone | 0h | 2021-05-07 | 2021-05-07 |  |  |  |  | 44.27d |  |  |  |  |  |
| 67 | 1.4.2 | **Datos de prueba** |  | 1.6d | 2021-06-17 | 2021-06-18 |  | 2021-06-17 | 2021-06-18 | 1.6d | 4.27d |  |  | 16h | 360 | 360 |
| 68 | 1.4.2.1 | Datos de entrada |  | 4h | 2021-06-17 | 2021-06-17 | 63 | 2021-06-17 | 2021-06-17 | 4h | 4.27d | 0d | Analistas; Programadores_MJ | 8h | 180 | 180 |
| 69 | 1.4.2.2 | Datos de salida |  | 8h | 2021-06-17 | 2021-06-18 | 68 | 2021-06-17 | 2021-06-18 | 8h | 4.8d | 0d | Analistas; Programadores_MJ | 8h | 180 | 180 |
| 70 | 1.4.2.3 | Datos verificados | milestone | 0h | 2021-06-18 | 2021-06-18 | 68, 69 |  |  |  | 11.73d |  |  |  |  |  |
| 71 | 1.4.3 | **Pruebas unitarias** |  | 7.47d | 2021-06-16 | 2021-06-24 |  | 2021-06-16 | 2021-06-24 | 7.47d | 0d |  |  | 220h | 4,260 | 4,260 |
| 72 | 1.4.3.1 | Pruebas de arquitectura |  | 28h | 2021-06-16 | 2021-06-21 | 60 | 2021-06-16 | 2021-06-21 | 28h | 0d |  | Analistas; Programadores [200%] | 84h | 1,540 | 1,540 |
| 73 | 1.4.3.2 | Pruebas de aceptación |  | 20h | 2021-06-17 | 2021-06-21 | 72FF | 2021-06-17 | 2021-06-21 | 20h | 0d |  | Analistas; Programadores | 40h | 800 | 800 |
| 74 | 1.4.3.3 | Pruebas de seguridad |  | 28h | 2021-06-21 | 2021-06-24 | 73 | 2021-06-21 | 2021-06-24 | 28h | 0d |  | Analistas; Programadores | 56h | 1,120 | 1,120 |
| 75 | 1.4.3.4 | Pruebas de integración software |  | 20h | 2021-06-22 | 2021-06-24 | 74FF | 2021-06-22 | 2021-06-24 | 20h | 0d |  | Analistas; Programadores | 40h | 800 | 800 |
| 76 | 1.4.3.5 | Pruebas completadas | milestone | 0h | 2021-06-24 | 2021-06-24 | 72, 73, 74, 75 |  |  |  | 6.93d |  |  |  |  |  |
| 77 | 1.4.4 | **Tratamiento de errores** |  | 4d | 2021-06-25 | 2021-06-30 |  | 2021-06-25 | 2021-06-30 | 4d | 0d |  |  | 60h | 1,200 | 1,200 |
| 78 | 1.4.4.1 | Corrección de errores |  | 26h | 2021-06-25 | 2021-06-30 | 69, 75 | 2021-06-25 | 2021-06-30 | 26h | 0d |  | Analistas; Programadores [200%] | 52h | 1,040 | 1,040 |
| 79 | 1.4.4.2 | Informe de errores |  | 4h | 2021-06-30 | 2021-06-30 | 78 | 2021-06-30 | 2021-06-30 | 4h | 0d |  | Analistas; Programadores | 8h | 160 | 160 |
| 80 | 1.4.4.3 | Testing acabado | milestone | 0h | 2021-06-30 | 2021-06-30 | 79 | 2021-06-30 | 2021-06-30 | 0h | 0d |  |  |  |  |  |

| ID | WBS | Task | Type | Duration | Start | Finish | Predecessors | Baseline start | Baseline finish | Baseline duration | Total slack | Free slack | Resources | Work | Cost | Baseline cost |
| --- | --- | --- | --- | --- | --- | --- | --- | --- | --- | --- | --- | --- | --- | --- | --- | --- |
| 81 | 1.5 | **Fase de despliegue** |  | 2.93d | 2021-06-30 | 2021-07-05 |  | 2021-06-30 | 2021-07-05 | 2.93d | 0d |  | Servidores | 64h | 3,820 | 3,820 |
| 82 | 1.5.1 | **Diseño de descriptores** |  | 1.07d | 2021-06-30 | 2021-07-01 |  | 2021-06-30 | 2021-07-01 | 1.07d | 0d |  |  | 28h | 1,060 | 1,060 |
| 83 | 1.5.1.1 | Descripción de servicio |  | 6h | 2021-06-30 | 2021-07-01 | 80 | 2021-06-30 | 2021-07-01 | 6h | 0d |  | Analistas; Jefe de proyecto | 12h | 540 | 540 |
| 84 | 1.5.1.2 | Analisis de técnicas para el lanzamiento |  | 4h | 2021-06-30 | 2021-07-01 | 80 | 2021-06-30 | 2021-07-01 | 4h | 1.33d | 0d | Analistas; Subdirector | 8h | 260 | 260 |
| 85 | 1.5.1.3 | Descripción de despliege |  | 4h | 2021-07-01 | 2021-07-01 | 84 | 2021-07-01 | 2021-07-01 | 4h | 1.33d | 0d | Analistas; Subdirector | 8h | 260 | 260 |
| 86 | 1.5.1.4 | Descriptores tratados | milestone | 0h | 2021-07-01 | 2021-07-01 | 83, 84, 85 |  |  |  | 1.87d |  |  |  |  |  |
| 87 | 1.5.2 | **Formación** |  | 2.13d | 2021-07-01 | 2021-07-05 |  | 2021-07-01 | 2021-07-05 | 2.13d | 0d |  |  | 36h | 760 | 760 |
| 88 | 1.5.2.1 | Redacción de guía para usuarios |  | 6h | 2021-07-01 | 2021-07-02 | 83 | 2021-07-01 | 2021-07-02 | 6h | 0.27d |  | Analistas; Programadores | 12h | 240 | 240 |
| 89 | 1.5.2.2 | Redacción de guía para técnicos |  | 8h | 2021-07-01 | 2021-07-02 | 83 | 2021-07-01 | 2021-07-02 | 8h | 0d |  | Analistas; Programadores | 16h | 320 | 320 |
| 90 | 1.5.2.3 | Impartir cursos para usuarios y técnicos |  | 4h | 2021-07-02 | 2021-07-02 | 88, 89 | 2021-07-02 | 2021-07-02 | 4h | 0d |  | Analistas | 4h | 100 | 100 |
| 91 | 1.5.2.4 | Evaluación del grado de aceptacion del producto |  | 4h | 2021-07-05 | 2021-07-05 | 85, 90 | 2021-07-05 | 2021-07-05 | 4h | 0d |  | Analistas | 4h | 100 | 100 |
| 92 | 1.5.2.5 | Finalización de proyecto | milestone | 0h | 2021-07-05 | 2021-07-05 | 91 | 2021-07-05 | 2021-07-05 | 0h | 0d |  |  |  |  |  |
