# Planificación temporal

Schedule from MS Project, 2021-05-07 to 2021-07-02, 7.5 hours a day, costs in €, A marks actual dates.

## Calendars

- Estándar: Mon-Fri 09:00-13:00, 15:00-19:00; Sat-Sun off.

## Resources

| Resource | Rate |
| --- | --- |
| Jefe de proyecto | 75 |
| Analistas | 30 |
| Programadores | 20 |
| Diseñador | 15 |
| Servidores | 2000 |
| Licencia | 500 |
| Programadores_MJ | 20 |
| Subdirector | 50 |
| Equipos de trabajo | 2500 |
| Viajes | 1500 |

## Schedule

| ID | WBS | Task | Type | Duration | Start | Finish | Predecessors | Complete | Remaining | Baseline start | Baseline finish | Baseline duration | Total slack | Free slack | Resources | Work | Actual work | Cost | Baseline cost | Actual cost |
| --- | --- | --- | --- | --- | --- | --- | --- | --- | --- | --- | --- | --- | --- | --- | --- | --- | --- | --- | --- | --- |
| 1 | 1 | **Game Discovery** |  | 42.93d | 2021-05-07 A | 2021-07-02 |  | 34% | 28.4d | 2021-05-07 | 2021-06-30 | 40.8d | 0d |  |  | 1012h | 376.6h | 29,180 | 29,180 | 13,625 |
| 2 | 1.1 | **Fase de Análisis** |  | 13.6d | 2021-05-07 A | 2021-05-25 |  | 95% | 0.74d | 2021-05-07 | 2021-05-25 | 13.6d | 29.33d |  |  | 210h | 198h | 10,300 | 10,300 | 9,670 |
| 3 | 1.1.1 | **Declaración de alcance** |  | 4d | 2021-05-07 A | 2021-05-12 A |  | 100% |  | 2021-05-07 | 2021-05-12 | 4d |  |  |  | 60h | 60h | 2,650 | 2,650 | 2,650 |
| 4 | 1.1.1.1 | DAFO |  | 10h | 2021-05-07 A | 2021-05-10 A |  | 100% |  | 2021-05-07 | 2021-05-10 | 10h |  |  | Analistas; Jefe de proyecto | 20h | 20h | 1,050 | 1,050 | 1,050 |
| 5 | 1.1.1.2 | Planificación económica |  | 8h | 2021-05-10 A | 2021-05-11 A | 4 | 100% |  | 2021-05-10 | 2021-05-11 | 8h |  |  | Analistas; Subdirector | 16h | 16h | 640 | 640 | 640 |
| 6 | 1.1.1.3 | Priorización de objetivos |  | 6h | 2021-05-11 A | 2021-05-11 A | 5 | 100% |  | 2021-05-11 | 2021-05-11 | 6h |  |  | Analistas; Subdirector | 12h | 12h | 480 | 480 | 480 |
| 7 | 1.1.1.4 | Planificación de tiempos |  | 6h | 2021-05-12 A | 2021-05-12 A | 6 | 100% |  | 2021-05-12 | 2021-05-12 | 6h |  |  | Analistas; Subdirector | 12h | 12h | 480 | 480 | 480 |
| 8 | 1.1.1.5 | Alcance logrado | milestone | 0h | 2021-05-12 A | 2021-05-12 A | 7 | 100% |  | 2021-05-12 | 2021-05-12 | 0h |  |  |  |  |  |  |  |  |
| 9 | 1.1.2 | **Análisis de requisitos** |  | 4.8d | 2021-05-12 A | 2021-05-19 |  | 90% | 0.48d | 2021-05-12 | 2021-05-19 | 4.8d | 34.13d |  |  | 62h | 54.8h | 3,030 | 3,030 | 2,652 |
| 10 | 1.1.2.1 | Identificación de RF y RNF |  | 8h | 2021-05-12 A | 2021-05-13 A | 4, 8 | 100% |  | 2021-05-12 | 2021-05-13 | 8h |  |  | Analistas; Jefe de proyecto | 16h | 16h | 840 | 840 | 840 |
| 11 | 1.1.2.2 | Priorización de RF |  | 6h | 2021-05-13 A | 2021-05-14 A | 10 | 100% |  | 2021-05-13 | 2021-05-14 | 6h |  |  | Analistas; Jefe de proyecto | 12h | 12h | 630 | 630 | 630 |
| 12 | 1.1.2.3 | Análisis de arquitectura |  | 10h | 2021-05-14 A | 2021-05-17 A | 11 | 100% |  | 2021-05-14 | 2021-05-17 | 10h |  |  | Analistas | 10h | 10h | 300 | 300 | 300 |
| 13 | 1.1.2.4 | Realización de diagramas de casos de uso |  | 12h | 2021-05-17 A | 2021-05-19 | 12 | 70% | 3.6h | 2021-05-17 | 2021-05-19 | 12h | 34.13d |  | Analistas; Jefe de proyecto | 24h | 16.8h | 1,260 | 1,260 | 882 |
| 14 | 1.1.2.5 | Requisitos analizados | milestone | 0h | 2021-05-19 A | 2021-05-19 A | 13 | 100% |  | 2021-05-19 | 2021-05-19 | 0h |  |  |  |  |  |  |  |  |
| 15 | 1.1.3 | **Validación** |  | 7.73d | 2021-05-14 A | 2021-05-25 |  | 95% | 0.42d | 2021-05-14 | 2021-05-25 | 7.73d | 29.33d |  |  | 88h | 83.2h | 4,620 | 4,620 | 4,368 |
| 16 | 1.1.3.1 | Definición de la validación RF |  | 8h | 2021-05-14 A | 2021-05-17 A | 11 | 100% |  | 2021-05-14 | 2021-05-17 | 8h |  |  | Analistas; Jefe de proyecto | 16h | 16h | 840 | 840 | 840 |
| 17 | 1.1.3.2 | Definición de la integración |  | 8h | 2021-05-19 A | 2021-05-20 A | 13, 16 | 100% |  | 2021-05-19 | 2021-05-20 | 8h |  |  | Analistas; Jefe de proyecto | 16h | 16h | 840 | 840 | 840 |
| 18 | 1.1.3.3 | Definición de medidas de aseguramiento de la calidad |  | 10h | 2021-05-20 A | 2021-05-21 A | 17 | 100% |  | 2021-05-20 | 2021-05-21 | 10h |  |  | Analistas; Jefe de proyecto | 20h | 20h | 1,050 | 1,050 | 1,050 |
| 19 | 1.1.3.4 | Definición de la validación de la arquitectura |  | 8h | 2021-05-21 A | 2021-05-24 | 18 | 70% | 2.4h | 2021-05-21 | 2021-05-24 | 8h | 30.67d |  | Analistas; Jefe de proyecto | 16h | 11.2h | 840 | 840 | 588 |
| 20 | 1.1.3.5 | Definición de la migración |  | 10h | 2021-05-24 A | 2021-05-25 A | 19 | 100% |  | 2021-05-24 | 2021-05-25 | 10h |  |  | Analistas; Jefe de proyecto | 20h | 20h | 1,050 | 1,050 | 1,050 |
| 21 | 1.1.3.6 | Definición del proyecto terminada | milestone | 0h | 2021-05-25 A | 2021-05-25 A | 20 | 100% |  | 2021-05-25 | 2021-05-25 | 0h |  |  |  |  |  |  |  |  |
| 22 | 1.2 | **Fase de Diseño** |  | 8.53d | 2021-05-25 A | 2021-06-04 |  | 94% | 0.48d | 2021-05-25 | 2021-06-04 | 8.53d | 1.6d |  |  | 190h | 178.6h | 4,210 | 4,210 | 3,955 |
| 23 | 1.2.1 | **Diseño de la IU** |  | 2.67d | 2021-05-25 A | 2021-05-28 |  | 86% | 0.36d | 2021-05-25 | 2021-05-28 | 2.67d | 1.31d |  |  | 22h | 19h | 330 | 330 | 285 |
| 24 | 1.2.1.1 | Interfaz de la app de técnicos |  | 2h | 2021-05-25 A | 2021-05-25 A | 21 | 100% |  | 2021-05-25 | 2021-05-25 | 2h |  |  | Diseñador | 2h | 2h | 30 | 30 | 30 |
| 25 | 1.2.1.2 | Interfaz de la app de usuarios |  | 10h | 2021-05-25 A | 2021-05-26 A | 21 | 100% |  | 2021-05-25 | 2021-05-26 | 10h |  |  | Diseñador | 10h | 10h | 150 | 150 | 150 |
| 26 | 1.2.1.3 | Interfaz de la página web |  | 10h | 2021-05-27 A | 2021-05-28 | 24, 25 | 70% | 3h | 2021-05-27 | 2021-05-28 | 10h | 1.31d | 0d | Diseñador | 10h | 7h | 150 | 150 | 105 |

| ID | WBS | Task | Type | Duration | Start | Finish | Predecessors | Complete | Remaining | Baseline start | Baseline finish | Baseline duration | Total slack | Free slack | Resources | Work | Actual work | Cost | Baseline cost | Actual cost |
| --- | --- | --- | --- | --- | --- | --- | --- | --- | --- | --- | --- | --- | --- | --- | --- | --- | --- | --- | --- | --- |
| 27 | 1.2.2 | **Diseño de los módulos** |  | 4.8d | 2021-05-28 A | 2021-06-03 A |  | 100% |  | 2021-05-28 | 2021-06-03 | 4.8d |  |  |  | 36h | 36h | 540 | 540 | 540 |
| 28 | 1.2.2.1 | Diseño del módulo de inversores |  | 18h | 2021-05-28 A | 2021-06-01 A | 24, 26 | 100% |  | 2021-05-28 | 2021-06-01 | 18h |  |  | Diseñador | 18h | 18h | 270 | 270 | 270 |
| 29 | 1.2.2.2 | Diseño del módulo de clientes |  | 18h | 2021-06-01 A | 2021-06-03 A | 28 | 100% |  | 2021-06-01 | 2021-06-03 | 18h |  |  | Diseñador | 18h | 18h | 270 | 270 | 270 |
| 30 | 1.2.3 | **Diseño de la arquitectura** |  | 4.27d | 2021-05-26 A | 2021-05-31 |  | 90% | 0.45d | 2021-05-26 | 2021-05-31 | 4.27d | 5.6d |  |  | 72h | 63.6h | 1,840 | 1,840 | 1,630 |
| 31 | 1.2.3.1 | Lógica del módulo de técnicos |  | 4h | 2021-05-26 A | 2021-05-26 A | 24 | 100% |  | 2021-05-26 | 2021-05-26 | 4h |  |  | Programadores; Analistas | 8h | 8h | 200 | 200 | 200 |
| 32 | 1.2.3.2 | Lógica del módulo de usuarios |  | 22h | 2021-05-27 A | 2021-05-31 A | 25 | 100% |  | 2021-05-27 | 2021-05-31 | 22h |  |  | Programadores; Analistas | 36h | 36h | 940 | 940 | 940 |
| 33 | 1.2.3.3 | Lógica de la página web |  | 14h | 2021-05-28 A | 2021-05-31 | 26 | 70% | 4.2h | 2021-05-28 | 2021-05-31 | 14h | 5.6d | 0d | Programadores; Analistas | 28h | 19.6h | 700 | 700 | 490 |
| 34 | 1.2.4 | **Diseño de bases de datos** |  | 4d | 2021-06-01 A | 2021-06-04 A |  | 100% |  | 2021-06-01 | 2021-06-04 | 4d |  |  |  | 60h | 60h | 1,500 | 1,500 | 1,500 |
| 35 | 1.2.4.1 | Seguridad |  | 10h | 2021-06-01 A | 2021-06-02 A | 31, 32, 33 | 100% |  | 2021-06-01 | 2021-06-02 | 10h |  |  | Programadores; Analistas | 20h | 20h | 500 | 500 | 500 |
| 36 | 1.2.4.2 | Diseño de permisos |  | 10h | 2021-06-02 A | 2021-06-03 A | 35 | 100% |  | 2021-06-02 | 2021-06-03 | 10h |  |  | Programadores; Analistas | 20h | 20h | 500 | 500 | 500 |
| 37 | 1.2.4.3 | Diseño de datos |  | 10h | 2021-06-03 A | 2021-06-04 A | 36 | 100% |  | 2021-06-03 | 2021-06-04 | 10h |  |  | Programadores; Analistas | 20h | 20h | 500 | 500 | 500 |
| 38 | 1.2.4.4 | Diseño completado | milestone | 0h | 2021-06-04 A | 2021-06-04 A | 37 | 100% |  | 2021-06-04 | 2021-06-04 | 0h |  |  |  |  |  |  |  |  |
| 39 | 1.3 | **Fase de Implementación** |  | 14.67d | 2021-05-26 | 2021-06-14 |  |  |  | 2021-05-26 | 2021-06-10 | 12.53d | 0d |  |  | 248h |  | 4,960 | 4,960 |  |
| 40 | 1.3.1 | **Módulos** |  | 6.4d | 2021-06-04 | 2021-06-14 |  |  |  | 2021-06-04 | 2021-06-10 | 4.27d | 0d |  |  | 64h |  | 1,280 | 1,280 |  |
| 41 | 1.3.1.1 | Implementación del módulo de inversores |  | 16h | 2021-06-04 | 2021-06-08 | 38 |  |  | 2021-06-04 | 2021-06-08 | 16h | 0d |  | Programadores [200%] | 32h |  | 640 | 640 |  |
| 42 | 1.3.1.2 | Implementación del módulo de gestión |  | 32h | 2021-06-08 | 2021-06-14 | 41 |  |  | 2021-06-08 | 2021-06-10 | 16h | 0d |  | Programadores | 32h |  | 640 | 640 |  |
| 43 | 1.3.2 | **Implementación de base de datos** |  | 3.47d | 2021-06-02 | 2021-06-07 |  |  |  | 2021-06-02 | 2021-06-07 | 3.47d | 5.6d |  |  | 32h |  | 640 | 640 |  |
| 44 | 1.3.2.1 | Seguridad |  | 16h | 2021-06-02 | 2021-06-04 | 35 |  |  | 2021-06-02 | 2021-06-04 | 16h | 6.93d |  | Programadores | 16h |  | 320 | 320 |  |
| 45 | 1.3.2.2 | Implementación de permisos |  | 16h | 2021-06-03 | 2021-06-07 | 36 |  |  | 2021-06-03 | 2021-06-07 | 16h | 5.6d |  | Programadores | 16h |  | 320 | 320 |  |
| 46 | 1.3.3 | **Implementación de la IU** |  | 5.87d | 2021-05-26 | 2021-06-02 |  |  |  | 2021-05-26 | 2021-06-02 | 5.87d | 8.8d |  |  | 62h |  | 1,240 | 1,240 |  |
| 47 | 1.3.3.1 | Interfaz de app para técnicos |  | 10h | 2021-05-26 | 2021-05-27 | 24 |  |  | 2021-05-26 | 2021-05-27 | 10h | 13.33d |  | Programadores | 10h |  | 200 | 200 |  |
| 48 | 1.3.3.2 | Interfaz de app para clientes |  | 26h | 2021-05-27 | 2021-06-01 | 25 |  |  | 2021-05-27 | 2021-06-01 | 26h | 10.13d |  | Programadores | 26h |  | 520 | 520 |  |
| 49 | 1.3.3.3 | Interfaz de página web |  | 26h | 2021-05-28 | 2021-06-02 | 26 |  |  | 2021-05-28 | 2021-06-02 | 26h | 8.8d |  | Programadores | 26h |  | 520 | 520 |  |
| 50 | 1.3.4 | **Implementación de la arquitectura** |  | 14.13d | 2021-05-26 | 2021-06-14 |  |  |  | 2021-05-26 | 2021-06-10 | 12d | 0d |  |  | 90h |  | 1,800 | 1,800 |  |
| 51 | 1.3.4.1 | Lógica de app para técnicos |  | 18h | 2021-05-26 | 2021-05-28 | 31 |  |  | 2021-05-26 | 2021-05-28 | 18h | 11.73d |  | Programadores | 18h |  | 360 | 360 |  |
| 52 | 1.3.4.2 | Lógica de app para clientes |  | 36h | 2021-05-31 | 2021-06-07 | 32 |  |  | 2021-05-31 | 2021-06-07 | 36h | 5.87d |  | Programadores | 36h |  | 720 | 720 |  |
| 53 | 1.3.4.3 | Lógica de página web |  | 36h | 2021-06-01 | 2021-06-07 | 33 |  |  | 2021-06-01 | 2021-06-07 | 36h | 5.6d |  | Programadores | 36h |  | 720 | 720 |  |
| 54 | 1.3.4.4 | Versión preliminar del producto | milestone | 0h | 2021-06-14 | 2021-06-14 | 51, 52, 53, 41, 42, 44, 45, 47, 48, 49 |  |  | 2021-06-10 | 2021-06-10 | 0h | 0d |  |  |  |  |  |  |  |

| ID | WBS | Task | Type | Duration | Start | Finish | Predecessors | Baseline start | Baseline finish | Baseline duration | Total slack | Free slack | Resources | Work | Cost | Baseline cost |
| --- | --- | --- | --- | --- | --- | --- | --- | --- | --- | --- | --- | --- | --- | --- | --- | --- |
| 55 | 1.4 | **Fase de validación y pruebas** |  | 11.47d | 2021-06-14 | 2021-06-29 |  | 2021-06-10 | 2021-06-25 | 11.47d | 0d |  |  | 300h | 7,500 | 7,500 |
| 56 | 1.4.1 | **Casos de prueba** |  | 2.13d | 2021-06-14 | 2021-06-16 |  | 2021-06-10 | 2021-06-14 | 2.13d | 4.8d |  |  | 32h | 800 | 800 |
| 57 | 1.4.1.1 | Diseño de datos de entrada |  | 6h | 2021-06-14 | 2021-06-15 | 54 | 2021-06-10 | 2021-06-11 | 6h | 4.8d | 0d | Analistas; Programadores | 12h | 300 | 300 |
| 58 | 1.4.1.2 | Introducción de datos en la base de datos |  | 4h | 2021-06-15 | 2021-06-15 | 57 | 2021-06-11 | 2021-06-11 | 4h | 12.27d | 0d | Analistas; Programadores | 8h | 200 | 200 |
| 59 | 1.4.1.3 | Validar consistencia de datos |  | 6h | 2021-06-16 | 2021-06-16 | 58, 57 | 2021-06-14 | 2021-06-14 | 6h | 12.27d |  | Analistas; Programadores | 12h | 300 | 300 |
| 60 | 1.4.2 | **Datos de prueba** |  | 2.13d | 2021-06-15 | 2021-06-17 |  | 2021-06-11 | 2021-06-15 | 2.13d | 4.53d |  |  | 16h | 400 | 400 |
| 61 | 1.4.2.1 | Datos de entrada |  | 8h | 2021-06-15 | 2021-06-16 | 57 | 2021-06-11 | 2021-06-14 | 8h | 4.8d | 0d | Analistas; Programadores_MJ | 8h | 200 | 200 |
| 62 | 1.4.2.2 | Datos de salida |  | 8h | 2021-06-16 | 2021-06-17 | 61 | 2021-06-14 | 2021-06-15 | 8h | 4.53d |  | Analistas; Programadores_MJ | 8h | 200 | 200 |
| 63 | 1.4.3 | **Pruebas unitarias** |  | 7.47d | 2021-06-14 | 2021-06-23 |  | 2021-06-10 | 2021-06-21 | 7.47d | 0d |  |  | 192h | 4,800 | 4,800 |
| 64 | 1.4.3.1 | Pruebas de arquitectura |  | 28h | 2021-06-14 | 2021-06-18 | 54 | 2021-06-10 | 2021-06-16 | 28h | 0d |  | Analistas; Programadores | 56h | 1,400 | 1,400 |
| 65 | 1.4.3.2 | Pruebas de aceptación |  | 20h | 2021-06-15 | 2021-06-18 | 64FF | 2021-06-11 | 2021-06-16 | 20h | 0d |  | Analistas; Programadores | 40h | 1,000 | 1,000 |
| 66 | 1.4.3.3 | Pruebas de seguridad |  | 28h | 2021-06-18 | 2021-06-23 | 65 | 2021-06-16 | 2021-06-21 | 28h | 0d |  | Analistas; Programadores | 56h | 1,400 | 1,400 |
| 67 | 1.4.3.4 | Pruebas de integración software |  | 20h | 2021-06-21 | 2021-06-23 | 66FF | 2021-06-17 | 2021-06-21 | 20h | 0d |  | Analistas; Programadores | 40h | 1,000 | 1,000 |
| 68 | 1.4.4 | **Tratamiento de errores** |  | 4d | 2021-06-23 | 2021-06-29 |  | 2021-06-21 | 2021-06-25 | 4d | 0d |  |  | 60h | 1,500 | 1,500 |
| 69 | 1.4.4.1 | Corrección de errores |  | 26h | 2021-06-23 | 2021-06-28 | 62, 67 | 2021-06-21 | 2021-06-24 | 26h | 0d |  | Analistas; Programadores | 52h | 1,300 | 1,300 |
| 70 | 1.4.4.2 | Informe de errores |  | 4h | 2021-06-29 | 2021-06-29 | 69 | 2021-06-25 | 2021-06-25 | 4h | 0d |  | Analistas; Programadores | 8h | 200 | 200 |
| 71 | 1.4.4.3 | Testing acabado | milestone | 0h | 2021-06-29 | 2021-06-29 | 70 | 2021-06-25 | 2021-06-25 | 0h | 0d |  |  |  |  |  |
| 72 | 1.5 | **Fase de Despliegue** |  | 2.93d | 2021-06-29 | 2021-07-02 |  | 2021-06-25 | 2021-06-30 | 2.93d | 0d |  |  | 64h | 2,210 | 2,210 |
| 73 | 1.5.1 | **Diseño de Descriptores** |  | 1.07d | 2021-06-29 | 2021-06-30 |  | 2021-06-25 | 2021-06-28 | 1.07d | 0d |  |  | 28h | 1,270 | 1,270 |
| 74 | 1.5.1.1 | Descripción de servicio |  | 6h | 2021-06-29 | 2021-06-30 | 71 | 2021-06-25 | 2021-06-28 | 6h | 0d |  | Analistas; Jefe de proyecto | 12h | 630 | 630 |
| 75 | 1.5.1.2 | Analisis de técnicas para el lanzamiento |  | 4h | 2021-06-29 | 2021-06-29 | 71 | 2021-06-25 | 2021-06-25 | 4h | 1.33d | 0d | Analistas; Subdirector | 8h | 320 | 320 |
| 76 | 1.5.1.3 | Descripción de despliege |  | 4h | 2021-06-30 | 2021-06-30 | 75 | 2021-06-28 | 2021-06-28 | 4h | 1.33d |  | Analistas; Subdirector | 8h | 320 | 320 |
| 77 | 1.5.2 | **Formación** |  | 2.13d | 2021-06-30 | 2021-07-02 |  | 2021-06-28 | 2021-06-30 | 2.13d | 0d |  |  | 36h | 940 | 940 |
| 78 | 1.5.2.1 | Redacción de guía para usuarios |  | 6h | 2021-06-30 | 2021-06-30 | 74 | 2021-06-28 | 2021-06-28 | 6h | 0.27d |  | Analistas; Programadores | 12h | 300 | 300 |
| 79 | 1.5.2.2 | Redacción de guía para técnicos |  | 8h | 2021-06-30 | 2021-07-01 | 74 | 2021-06-28 | 2021-06-29 | 8h | 0d |  | Analistas; Programadores | 16h | 400 | 400 |
| 80 | 1.5.2.3 | Impartir cursos para usuarios y técnicos |  | 4h | 2021-07-01 | 2021-07-01 | 78, 79 | 2021-06-29 | 2021-06-29 | 4h | 0d |  | Analistas | 4h | 120 | 120 |
| 81 | 1.5.2.4 | Evaluación del grado de aceptacion del producto |  | 4h | 2021-07-01 | 2021-07-02 | 76, 80 | 2021-06-29 | 2021-06-30 | 4h | 0d |  | Analistas | 4h | 120 | 120 |
| 82 | 1.5.2.5 | Finalización de proyecto | milestone | 0h | 2021-07-02 | 2021-07-02 | 81 | 2021-06-30 | 2021-06-30 | 0h | 0d |  |  |  |  |  |
