# Planificación temporal

Schedule from MS Project, 2022-11-03 to 2023-04-19, 7.5 hours a day, costs in €.

## Calendars

- Estándar: Mon-Fri 09:00-13:00, 15:00-19:00; Sat-Sun off.

## Resources

| Resource | Rate |
| --- | --- |
| Jefe de proyecto | 15 |
| Diseñador web | 12 |
| Diseñador de arquitectura | 14 |
| Ingeniero TIC | 13 |
| Security Manager | 13 |
| Jefe de implantación | 15 |
| Cotes de vehículos | 300000 |
| Base de datos | 15000 |
| Materiales para chips | 10000 |
| Licencias de circulación de los vehiculos | 10000 |

## Schedule

| ID | WBS | Task | Duration | Start | Finish | Predecessors | Total slack | Free slack | Resources | Work | Cost |
| --- | --- | --- | --- | --- | --- | --- | --- | --- | --- | --- | --- |
| 1 | 1 | **Vehiculos** | 128d | 2022-11-03 | 2023-04-19 |  | 0d |  |  | 1965h | 350,687.5 |
| 2 | 1.1 | **Aplicación móvil** | 91d | 2022-11-03 | 2023-03-02 |  | 0d |  |  | 885h | 11,235 |
| 3 | 1.1.1 | **Visualización de vehículos en tiempo real** | 23d | 2022-11-03 | 2022-12-02 |  | 0d |  |  | 217.5h | 2,760 |
| 4 | 1.1.1.1 | Creación de mockups | 2d | 2022-11-03 | 2022-11-04 |  | 0d |  | Jefe de proyecto; Diseñador de arquitectura; Jefe de implantación | 45h | 660 |
| 5 | 1.1.1.2 | Diseño de la interfaz gráfica | 1d | 2022-11-04 | 2022-11-07 | 4 | 0d |  | Diseñador de arquitectura; Diseñador web | 15h | 195 |
| 6 | 1.1.1.3 | Implementación sistema visualización | 7d | 2022-11-07 | 2022-11-16 | 5 | 0d |  | Diseñador web | 52.5h | 630 |
| 7 | 1.1.1.3 | Implementación de funcionalidades extras | 10d | 2022-11-16 | 2022-11-29 | 6 | 0d |  | Diseñador web | 75h | 900 |
| 8 | 1.1.1.5 | Validación y testeo | 3d | 2022-11-29 | 2022-12-02 | 7 | 0d |  | Diseñador web; Security Manager | 30h | 375 |
| 9 | 1.1.2 | **Pasarela de Pago y transacciones** | 49d | 2022-12-02 | 2023-02-06 |  | 0d |  |  | 330h | 4,237.5 |
| 10 | 1.1.2.1 | Analisis de API a implementar | 3d | 2022-12-02 | 2022-12-07 | 8 | 0d |  | Diseñador de arquitectura; Jefe de proyecto | 45h | 652.5 |
| 11 | 1.1.2.2 | Diseño de arquitectura de seguridad | 4d | 2022-12-07 | 2022-12-13 | 10 | 0d |  | Diseñador de arquitectura; Security Manager | 60h | 810 |
| 12 | 1.1.2.3 | Implementación de la API en la aplicación | 10d | 2022-12-13 | 2022-12-26 | 11 | 0d |  | Diseñador web | 75h | 900 |
| 13 | 1.1.2.4 | Gestión de datos de pago y transacciones | 7d | 2022-12-26 | 2023-01-04 | 12 | 0d |  | Diseñador web; Security Manager | 105h | 1,312.5 |
| 14 | 1.1.2.5 | Validación y testeo | 4d | 2023-01-04 | 2023-02-06 | 13 | 37d | 0d | Diseñador web; Security Manager | 45h | 562.5 |
| 15 | 1.1.3 | **Reserva de vehículos** | 19d | 2023-02-06 | 2023-03-02 |  | 37d |  |  | 202.5h | 2,527.5 |
| 16 | 1.1.3.1 | Diseño de interfaz de reserva | 2.5d | 2023-02-06 | 2023-02-08 | 14 | 37d | 0d | Diseñador de arquitectura; Jefe de proyecto | 30h | 435 |
| 17 | 1.1.3.2 | Implementación de funcionalidades | 10d | 2023-02-08 | 2023-02-22 | 16 | 37d | 0d | Diseñador web | 75h | 900 |
| 18 | 1.1.3.3 | Implementación de métodos de comunicación | 7d | 2023-02-08 | 2023-02-17 | 16 | 40d | 3d | Diseñador web | 52.5h | 630 |
| 19 | 1.1.3.4 | Pruebas de validación y estrés | 6d | 2023-02-22 | 2023-03-02 | 17, 18 | 37d |  | Diseñador web; Security Manager | 45h | 562.5 |
| 20 | 1.1.4 | **Servicio de atención al cliente** | 40.83d | 2023-01-05 | 2023-03-01 |  | 38.17d |  |  | 135h | 1,710 |
| 21 | 1.1.4.1 | Diseño de canales de comunicación | 4d | 2023-01-05 | 2023-02-03 | 13 | 38.17d | 0d | Diseñador de arquitectura; Jefe de proyecto; Security Manager | 45h | 630 |
| 22 | 1.1.4.2 | Implementación de funcionalidades | 10d | 2023-02-03 | 2023-02-27 | 21 | 38.17d | 0d | Diseñador web | 75h | 900 |
| 23 | 1.1.4.3 | Pruebas de estrés | 2d | 2023-02-27 | 2023-03-01 | 22 | 38.17d |  | Diseñador web | 15h | 180 |
| 24 | 1.2 | **Gestión de los vehículos** | 81d | 2023-01-04 | 2023-04-19 |  | 0d |  |  | 1080h | 339,452.5 |
| 25 | 1.2.1 | **Artefacto hardware** | 45d | 2023-01-04 | 2023-03-03 |  | 0d |  | Base de datos | 525h | 22,170 |
| 26 | 1.2.1.1 | Aálisis sobre BD a utilizar | 2d | 2023-01-04 | 2023-01-05 | 13 | 0d |  | Diseñador de arquitectura; Jefe de proyecto | 30h | 435 |
| 27 | 1.2.1.2 | Integración de la nueva infraestructura | 20d | 2023-01-05 | 2023-02-01 | 26 | 0d |  | Ingeniero TIC; Jefe de implantación | 300h | 4,200 |
| 28 | 1.2.1.3 | Implementación de la interfaz de control | 12d | 2023-02-01 | 2023-02-16 | 27 | 0d |  | Ingeniero TIC | 90h | 1,170 |
| 29 | 1.2.1.4 | Pruebas de seguridad | 7d | 2023-02-16 | 2023-02-27 | 28 | 0d |  | Ingeniero TIC; Security Manager | 105h | 1,365 |
| 30 | 1.2.1.5 | Cursos de instrucción sobre el uso del sistema | 4d | 2023-02-27 | 2023-03-03 | 29 | 0d |  |  |  |  |

| ID | WBS | Task | Duration | Start | Finish | Predecessors | Total slack | Free slack | Resources | Work | Cost |
| --- | --- | --- | --- | --- | --- | --- | --- | --- | --- | --- | --- |
| 31 | 1.2.2 | **Api de mensajería sensores** | 36d | 2023-03-03 | 2023-04-19 |  | 0d |  | Materiales para chips | 232.5h | 12,977.5 |
| 32 | 1.2.2.1 | Diseño de patrones de comunicación | 4d | 2023-03-03 | 2023-03-08 | 30 | 0d |  | Security Manager; Jefe de proyecto | 60h | 840 |
| 33 | 1.2.2.1 | Implementacion del sistema de detección | 7d | 2023-03-09 | 2023-03-17 | 32 | 0d |  | Diseñador web; Ingeniero TIC | 105h | 1,312.5 |
| 34 | 1.2.2.2 | Integración con la aplicación de control | 7d | 2023-03-17 | 2023-03-28 | 33 | 0d |  | Diseñador web | 52.5h | 630 |
| 35 | 1.2.2.4 | Pruebas de conectividad | 2d | 2023-04-18 | 2023-04-19 | 34 | 0d |  | Security Manager | 15h | 195 |
| 36 | 1.2.3 | **Gestión del mantenimiento de los vehículos** | 57d | 2023-02-01 | 2023-04-18 |  | 2d |  | Cotes de vehículos | 322.5h | 304,305 |
| 37 | 1.2.3.1 | Analisis de lugares para alquilar | 2d | 2023-02-01 | 2023-02-03 | 27 | 33.5d | 0d | Jefe de proyecto | 15h | 225 |
| 38 | 1.2.3.2 | Compra de vehículos | 1.5d | 2023-02-03 | 2023-02-06 | 37 | 33.5d | 0d | Jefe de proyecto; Jefe de implantación | 22.5h | 337.5 |
| 39 | 1.2.3.2 | Compra de nuevo material para el mantenimiento | 6d | 2023-02-06 | 2023-02-14 | 38 | 33.5d | 31.5d | Jefe de implantación | 45h | 675 |
| 40 | 1.2.3.3 | Implementacion de la comunicación con el sistema de control | 9d | 2023-03-28 | 2023-04-07 | 39, 34 | 2d | 0d | Ingeniero TIC; Security Manager | 135h | 1,755 |
| 41 | 1.2.3.5 | Pruebas de integración | 7d | 2023-04-07 | 2023-04-18 | 40 | 2d |  | Diseñador web; Security Manager | 105h | 1,312.5 |
